# GPS-XAR

How a schedule from MS Project changed from version to version. A marks actual dates.

## Version 1 (saved 2007-05-03)

Note of the change: added draft project schedule

| ID | WBS | Task | Duration | Start | Finish | Predecessors | Complete | Total float | Constraint |
| --- | --- | --- | --- | --- | --- | --- | --- | --- | --- |
| 1 | 1 | **GPS-XAR 1.0** | 44.5d? | 2007-04-02 A | 2007-06-01 |  | 19% | 0d |  |
| 2 | 1.1 | **Inception Phase** | 40d? | 2007-04-02 A | 2007-05-28 |  | 24% | 4.5d |  |
| 3 | 1.1.1 | **Inception Iteration 1** | 40d? | 2007-04-02 A | 2007-05-28 |  | 24% | 4.5d |  |
| 4 | 1 | **Project Management** | 28d? | 2007-04-06 A | 2007-05-15 |  | 26% | 0d |  |
| 5 |  | Plan the project | 1d? | 2007-04-06 A | 2007-04-06 A |  | 100% |  | start no earlier than 2007-04-02 |
| 6 |  | Plan Remainder of Initial Iteration | 1d? | 2007-04-19 A | 2007-04-19 |  | 80% | 18d | start no earlier than 2007-04-19 |
| 7 |  | Plan for Next Iteration | 1d? | 2007-05-11 | 2007-05-11 | 12FF |  | 2d |  |
| 8 | 1.1.1.1.4 | **Finalize Deliverables** | 3d? | 2007-05-11 | 2007-05-15 |  |  | 0d |  |
| 9 |  | April Status Report | 1d? | 2007-05-15 | 2007-05-15 |  |  | 0d | start no earlier than 2007-05-15 |
| 10 |  | May Status Report | 1d? | 2007-05-11 | 2007-05-11 |  |  | 2d | start no earlier than 2007-05-11 |
| 11 |  | Release Risk List | 1d? | 2007-05-11 | 2007-05-11 |  |  | 2d | start no earlier than 2007-05-11 |
| 12 |  | Release Software Development Plan | 1d? | 2007-05-11 | 2007-05-11 |  |  | 2d | start no earlier than 2007-05-11 |
| 13 | 3 | **Requirements** | 35.9d? | 2007-04-06 A | 2007-05-25 |  | 18% | 4.6d |  |
| 14 |  | Elicit Stakeholder Needs | 5.38d | 2007-04-06 A | 2007-04-13 | 5SS | 37% | 35.12d |  |
| 15 |  | Identify and Describe Use Cases | 7d | 2007-04-18 A | 2007-05-04 |  | 29% | 0d | finish no earlier than 2007-04-20 |
| 16 |  | Refine the System Definition | 2.5d | 2007-05-04 | 2007-05-17 | 6, 15 |  | 11.38d | start no earlier than 2007-04-18 |
| 17 | 1.1.1.2.4 | **Implement Requirement and Test Traceability** | 4.5d | 2007-04-16 | 2007-04-20 |  |  | 30d |  |
| 18 |  | Determine Approach | 2.25d | 2007-04-16 | 2007-04-20 |  |  | 30d | start no earlier than 2007-04-16 |
| 19 | 1.1.1.2.5 | **Finalize Deliverables** | 20.9d? | 2007-04-27 A | 2007-05-25 |  | 8% | -0.9d |  |
| 20 |  | Finalize ARC Document | 1d? | 2007-04-27 | 2007-04-27 |  |  | 12d | start no earlier than 2007-04-27 |
| 21 |  | Requirements Management Plan | 0.25d | 2007-05-11 A | 2007-05-11 |  | 50% | 2.75d |  |
| 22 |  | Finalize Vision Document | 1d | 2007-05-14 A | 2007-05-24 |  | 50% | -7d |  |
| 23 |  | Finalize Supplementary Spec | 1d | 2007-05-11 A | 2007-05-25 | 22 | 10% | -7.9d |  |
| 24 |  | Detail Prioritized Use Cases | 6.02d | 2007-05-03 | 2007-05-18 |  |  | -2.89d | finish no earlier than 2007-05-09 |
| 25 |  | Finalize Use Case Model | 1d | 2007-04-27 A | 2007-05-11 | 15 | 10% | -4.76d |  |
| 26 | 4 | **Analysis and Design** | 5d | 2007-04-02 A | 2007-04-06 |  | 17% | 39.5d |  |
| 27 |  | Use Case Analysis | 1d | 2007-04-05 A | 2007-04-05 A |  | 100% |  | start no earlier than 2007-04-05 |
| 28 | 1.1.1.3.2 | **Finalize Deliverables** | 5d | 2007-04-02 | 2007-04-06 |  |  | 39.5d |  |
| 29 |  | Release Candidate Software Architecture Document | 5d | 2007-04-02 | 2007-04-06 |  |  | 39.5d |  |
| 30 | 1.1.1.4 | **Implementation** | 3d | 2007-04-02 A | 2007-04-04 A |  | 100% |  |  |
| 31 |  | Structure the Implementation Model | 1.5d | 2007-04-02 A | 2007-04-04 A |  | 100% |  | start no earlier than 2007-04-09 |
| 32 | 5 | **Test** | 30d | 2007-04-02 | 2007-05-14 |  |  | 8.48d |  |
| 33 |  | Meet with Indepdent QA | 2h | 2007-04-02 | 2007-04-02 |  |  | 19.75d | finish no later than 2007-04-27 |
| 34 |  | Implement System Tests Against Protocol Management | 0d | 2007-05-14 | 2007-05-14 |  |  | 14.5d | start no earlier than 2007-05-14 |
| 35 |  | Analyze and Identify Test Approach | 1d | 2007-04-02 | 2007-04-27 |  |  | 8.48d |  |
| 36 | 1.1.1.5.4 | **Finalize Deliverables** | 4.02d | 2007-04-27 | 2007-05-03 |  |  | 8.48d |  |
| 37 |  | Release Test Plan | 2.53d | 2007-04-27 | 2007-05-03 | 35 |  | 8.48d |  |
| 38 | 6 | **Environment** | 35d | 2007-04-02 A | 2007-05-18 |  | 37% | 9.5d |  |
| 39 |  | Launch Development Process | 3h | 2007-04-09 A | 2007-04-09 A |  | 100% |  | start no earlier than 2007-04-09 |
| 40 | 1.1.1.6.2 | **Set Up Tools** | 20d | 2007-04-02 A | 2007-04-27 |  | 60% | 24.5d |  |
| 41 |  | Set Up Maven | 4d | 2007-04-02 A | 2007-04-09 A |  | 100% |  | start no earlier than 2007-04-02 |
| 42 |  | Set Up Continuous Integration | 1d | 2007-04-16 | 2007-04-16 |  |  | 7d | start no earlier than 2007-04-16 |
| 43 |  | Set Up Eclipse | 1d | 2007-04-03 A | 2007-04-06 A |  | 100% |  | start no earlier than 2007-04-03 |
| 44 |  | Set Up Selenium | 2d | 2007-04-26 | 2007-04-27 | 42 |  | 0d | finish no earlier than 2007-04-27 |
| 45 |  | Set Up Code Quality Tools | 3d | 2007-04-02 A | 2007-04-10 |  | 53% | 38d |  |
| 46 | 1.1.1.6.3 | **Finalize Deliverables** | 25d | 2007-04-16 A | 2007-05-18 |  | 10% | 0d |  |
| 47 |  | Release Development Case | 0.25d | 2007-05-14 A | 2007-05-14 |  | 20% | 1.75d | start no earlier than 2007-05-14 |
| 48 |  | Release Guidelines for the Project | 1.25d | 2007-04-16 | 2007-04-17 |  |  | 20.75d | start no earlier than 2007-04-16 |
| 49 |  | Release Templates for the Project | 9d | 2007-04-17 A | 2007-05-18 |  | 11% | -3d | finish no earlier than 2007-04-13 |
| 50 | 7 | **Configuration & Change Management** | 32.11d | 2007-04-02 | 2007-05-16 |  |  | -0.86d |  |
| 51 |  | Plan Project Configuration and Change Control | 1d | 2007-04-20 | 2007-04-23 |  |  | 16.75d | finish no earlier than 2007-04-20 |
| 52 | 1.1.1.7.2 | **Finalize Deliverables** | 32.11d | 2007-04-02 | 2007-05-16 |  |  | -0.86d |  |
| 53 |  | Release Configuration Management Plan | 0.75d | 2007-04-02 | 2007-05-16 |  |  | -0.5d |  |
| 54 |  | G-Forge Implementation of the Change Control Process | 2d | 2007-04-02 | 2007-05-16 |  |  | -0.86d |  |
| 55 |  | Inception Complete | 0d | 2007-05-28 | 2007-05-28 | 4, 5, 19, 8, 36, 46, 52 |  | -8d | start no earlier than 2007-05-28 |
| 56 | 1.2 | **Elaboration Phase** | 42.5d? | 2007-04-02 | 2007-05-30 |  |  | 0d |  |
| 57 | 1.2.1 | **Elaboration - Iteration 1** | 42.5d? | 2007-04-02 | 2007-05-30 |  |  | 0d |  |
| 58 | 1.2.1.1 | **Project Management** | 2.5d? | 2007-05-28 | 2007-05-30 | 55 |  | 0d |  |
| 59 |  | Iteration Post Mortem - Inception | 20h | 2007-05-28 | 2007-05-30 |  |  | 0d | start no earlier than 2007-05-23 |
| 60 |  | Plan Iteration | 1d? | 2007-05-28 | 2007-05-28 |  |  | 1.5d |  |
| 61 |  | Plan for Next Iteration | 1d? | 2007-05-28 | 2007-05-28 |  |  | 1.5d |  |
| 62 | 1.2.1.1.4 | **Finalize Deliverables** | 1d? | 2007-05-28 | 2007-05-28 |  |  | 1.5d |  |
| 63 |  | Update Project Plan | 1d? | 2007-05-28 | 2007-05-28 |  |  | 1.5d |  |
| 64 |  | Update Risk List | 1d? | 2007-05-28 | 2007-05-28 |  |  | 1.5d |  |
| 65 |  | Requirements | 1d? | 2007-04-02 | 2007-04-02 |  |  | 41.5d |  |
| 66 |  | Analysis and Design | 1d? | 2007-04-02 | 2007-04-02 |  |  | 41.5d |  |
| 67 |  | Implementation | 1d? | 2007-04-02 | 2007-04-02 |  |  | 41.5d |  |
| 68 |  | Test | 1d? | 2007-04-02 | 2007-04-02 |  |  | 41.5d |  |
| 69 |  | Environment | 1d? | 2007-04-02 | 2007-04-02 |  |  | 41.5d |  |
| 70 |  | Configuration Management | 1d? | 2007-04-02 | 2007-04-02 |  |  | 41.5d |  |

| ID | WBS | Task | Duration | Start | Finish | Predecessors | Total float |
| --- | --- | --- | --- | --- | --- | --- | --- |
| 71 |  | Elabortion Iteration 1 Complete | 1d? | 2007-04-02 | 2007-04-02 |  | 41.5d |
| 72 |  | Elaboration - Iteration 2 | 1d? | 2007-04-02 | 2007-04-02 |  | 41.5d |
| 73 | 1.3 | **Construction Phase** | 1d? | 2007-05-30 | 2007-05-31 | 56 | 0d |
| 74 |  | Construction - Iteration 1 | 1d? | 2007-05-30 | 2007-05-31 |  | 0d |
| 75 |  | Construction - Iteration 2 | 1d? | 2007-05-30 | 2007-05-31 |  | 0d |
| 76 |  | Construction - Iteration n | 1d? | 2007-05-30 | 2007-05-31 |  | 0d |
| 77 | 1.4 | **Transition Phase** | 1d? | 2007-05-31 | 2007-06-01 | 73 | 0d |
| 78 |  | Transition - Iteration 1 | 1d? | 2007-05-31 | 2007-06-01 |  | 0d |
| 79 |  | Transition - Iteration n | 1d? | 2007-05-31 | 2007-06-01 |  | 0d |

## Version 2 (saved 2007-05-09)

Note of the change: updates to inception schedule - expected to end by May 17

Last finish stays 2007-06-01. Complete tasks 6 → 9.

Added:

| ID | Task | Duration | Start | Finish |
| --- | --- | --- | --- | --- |
| 25 | Produce Use Case Summary | 0.5d | 2007-04-02 A | 2007-04-02 A |
| 28 | Analyze PRIDE XML | 2d | 2007-04-02 A | 2007-04-03 |
| 29 | Analyze CPAS 2.0 Data Model | 2d | 2007-04-02 A | 2007-04-03 |
| 34 | Install CPAS Locally/Reverse Engineer Data Model | 2d | 2007-04-02 A | 2007-04-03 A |

Removed: 34 Implement System Tests Against Protocol Management; 72 Elaboration - Iteration 2; 76 Construction - Iteration n; 79 Transition - Iteration n

Changed:

| ID | Task | Start | Finish | Duration | Complete | Total float |
| --- | --- | --- | --- | --- | --- | --- |
| 2 | **Inception Phase** |  |  |  | 24% → 23% |  |
| 3 | **Inception Iteration 1** |  |  |  | 24% → 23% |  |
| 4 | **Project Management** |  |  |  | 26% → 53% |  |
| 6 | Plan Remainder of Initial Iteration |  | 2007-04-19 A |  | 80% → 100% | 18d → none |
| 8 | **Finalize Deliverables** | 2007-05-11 A |  |  | 0% → 43% |  |
| 9 | April Status Report | 2007-05-15 A | 2007-05-15 A |  | 0% → 100% | 0d → none |
| 11 | Release Risk List | 2007-05-11 A |  |  | 0% → 50% |  |
| 12 | Release Software Development Plan | 2007-05-11 A |  |  | 0% → 20% |  |
| 13 | **Requirements** | 2007-04-06 A → 2007-04-02 A (-4d) |  | 35.9d? → 39.9d? | 18% → 26% |  |
| 19 | **Finalize Deliverables** | 2007-04-27 A → 2007-04-02 A (-25d) |  | 20.9d? → 39.9d? | 8% → 29% |  |
| 20 | Finalize ARC Document | 2007-04-27 A |  |  | 0% → 90% |  |
| 26 | Finalize Use Case Model |  | 2007-05-11 A |  | 10% → 100% | -4.76d → none |
| 27 | **Analysis and Design** |  |  |  | 17% → 20% |  |
| 33 | **Implementation** |  | 2007-04-04 A → 2007-04-03 A (-1d) | 3d → 2d |  |  |
| 35 | Structure the Implementation Model |  | 2007-04-04 A → 2007-04-03 A (-1d) | 1.5d → 2d |  |  |
| 36 | **Test** |  | 2007-05-14 → 2007-05-03 (-11d) | 30d → 23.52d |  |  |
| 41 | **Environment** |  |  |  | 37% → 7% |  |
| 43 | **Set Up Tools** | 2007-04-02 A → 2007-04-02 |  |  | 60% → 0% | 24.5d → 17d |
| 44 | Set Up Maven | 2007-04-02 A → 2007-04-02 | 2007-04-09 A → 2007-04-09 |  | 100% → 0% | none → 38.62d |
| 46 | Set Up Eclipse | 2007-04-03 A → 2007-04-03 | 2007-04-06 A → 2007-04-06 |  | 100% → 0% | none → 39.5d |
| 48 | Set Up Code Quality Tools | 2007-04-02 A → 2007-04-02 |  |  | 53% → 0% |  |

## Version 3 (saved 2007-05-18)

Note of the change: updated inception + remainder schedule

Last finish 2007-06-01 → 2007-10-17 (+138d). Complete tasks 9 → 16.

Added:

| ID | Task | Duration | Start | Finish | Predecessors | Constraint |
| --- | --- | --- | --- | --- | --- | --- |
| 29 | Compare PRIDE and XAR | 1d? | 2007-05-22 | 2007-05-22 | 27 |  |
| 58 | Trip to Indianapolis - CPAS | 4d | 2007-06-04 | 2007-06-07 |  | start no earlier than 2007-06-04 |
| 64 | Incorporate Stakeholder Comments into Vision and Supplemental Specs | 2d | 2007-05-28 | 2007-05-29 |  |  |
| 65 | **Finalize Deliverables** | 1d | 2007-05-28 | 2007-05-28 |  |  |
| 66 | Detail Registration and Login UC | 1d | 2007-05-28 | 2007-05-28 |  |  |
| 67 | Detail Create Annotated Proteomic Experiment File UC | 1d | 2007-05-28 | 2007-05-28 |  |  |
| 68 | Parse and Validate Proteomic Experiment File UC | 1d | 2007-05-28 | 2007-05-28 |  |  |
| 70 | Object Model for Experiment Annotation | 8d | 2007-05-28 | 2007-06-06 |  |  |
| 71 | Design of Conversion to XAR or PRIDE | 10d | 2007-06-07 | 2007-06-20 | 70 |  |
| 73 | UI for Experiment Annotation | 5d | 2007-06-21 | 2007-06-27 | 71 |  |
| 74 | Representative XML Produced | 1d | 2007-05-28 | 2007-05-28 |  |  |
| 76 | Produce Test Plan | 1d | 2007-05-28 | 2007-05-28 |  |  |
| 77 | Junit Tests for Targeted UC | 1d | 2007-05-28 | 2007-05-28 |  |  |
| 79 | Development Environment Available | 1w | 2007-05-28 | 2007-06-01 |  |  |
| 91 | Construction - Iteration 3 | 4w | 2007-08-23 | 2007-09-19 | 90 |  |
| 92 | Release Candidate Delivered to QA | 1d | 2007-06-28 | 2007-06-28 |  |  |

Removed: 24 Detail Prioritized Use Cases

Changed:

| ID | Task | Start | Finish | Duration | Complete | Total float | Predecessors | Other |
| --- | --- | --- | --- | --- | --- | --- | --- | --- |
| 1 | **GPS-XAR 1.0** |  | 2007-06-01 → 2007-10-17 (+138d) | 44.5d? → 143d? | 19% → 18% |  |  |  |
| 2 | **Inception Phase** |  |  |  | 23% → 53% | 4.5d → 0d |  |  |
| 3 | **Inception Iteration 1** |  |  |  | 23% → 53% | 4.5d → 0d |  |  |
| 13 | **Requirements** |  |  |  | 26% → 95% | 4.6d → -0.9d |  |  |
| 14 | Elicit Stakeholder Needs |  | 2007-04-13 A |  | 37% → 100% | 35.12d → none |  |  |
| 15 | Identify and Describe Use Cases |  | 2007-05-04 A |  | 29% → 100% | 11.38d → none |  |  |
| 16 | Refine the System Definition | 2007-05-04 A | 2007-05-17 A |  | 0% → 100% | 11.38d → none |  |  |
| 17 | **Implement Requirement and Test Traceability** | 2007-04-16 A | 2007-04-20 A |  | 0% → 100% | 30d → none |  |  |
| 18 | Determine Approach | 2007-04-16 A | 2007-04-20 A |  | 0% → 100% | 30d → none |  |  |
| 19 | **Finalize Deliverables** |  |  |  | 29% → 79% |  |  |  |
| 20 | Finalize ARC Document |  | 2007-04-27 A |  | 90% → 100% | 12d → none |  |  |
| 21 | Requirements Management Plan |  | 2007-05-11 A |  | 50% → 100% | 2.75d → none |  |  |
| 22 | Finalize Vision Document |  |  |  | 50% → 90% |  |  |  |
| 26 | **Analysis and Design** |  | 2007-04-06 → 2007-05-22 (+46d) | 5d → 37d? | 20% → 14% | 39.5d → 3d |  |  |
| 27 | Analyze PRIDE XML | 2007-04-02 A → 2007-05-09 A (+37d) | 2007-04-03 → 2007-05-21 (+48d) | 2d → 9d | 25% → 11% | 42.5d → 3d |  |  |
| 36 | **Test** | 2007-04-02 A |  |  | 0% → 7% |  |  |  |
| 37 | Meet with Indepdent QA | 2007-04-02 A | 2007-04-02 A |  | 0% → 100% | 19.75d → none |  |  |
| 41 | **Environment** | 2007-04-02 A → 2007-04-09 A (+7d) |  | 35d → 30d | 7% → 51% | 9.5d → 0d |  |  |
| 43 | **Finalize Deliverables** |  |  |  | 10% → 49% |  |  |  |
| 45 | Release Guidelines for the Project | 2007-04-16 A |  |  | 0% → 50% |  |  |  |
| 46 | Release Templates for the Project |  |  |  | 11% → 50% |  |  |  |
| 53 | **Elaboration Phase** | 2007-04-02 → 2007-05-28 (+56d) | 2007-05-30 → 2007-06-27 (+28d) | 42.5d? → 23d |  |  | none → 3 |  |
| 54 | **Elaboration - Iteration 1** | 2007-04-02 → 2007-05-28 (+56d) | 2007-05-30 → 2007-06-27 (+28d) | 42.5d? → 23d |  |  |  |  |
| 55 | **Project Management** |  | 2007-05-30 → 2007-06-07 (+8d) | 2.5d? → 9d |  | 0d → 14d |  |  |
| 57 | Plan Iteration |  |  | 1d? → 1d |  | 1.5d → 22d |  |  |
| 59 | Plan for Next Iteration |  |  | 1d? → 1d |  | 1.5d → 22d |  |  |
| 60 | **Finalize Deliverables** |  |  | 1d? → 1d |  | 1.5d → 22d |  |  |
| 61 | Update Project Plan |  |  | 1d? → 1d |  | 1.5d → 22d |  |  |
| 62 | Update Risk List |  |  | 1d? → 1d |  | 1.5d → 22d |  |  |
| 63 | **Requirements** | 2007-04-02 → 2007-05-28 (+56d) | 2007-04-02 → 2007-05-29 (+57d) | 1d? → 2d |  | 41.5d → 21d |  |  |
| 69 | **Analysis and Design** | 2007-04-02 → 2007-05-28 (+56d) | 2007-04-02 → 2007-06-20 (+79d) | 1d? → 18d |  | 41.5d → 0d |  |  |
| 72 | **Implementation** | 2007-04-02 → 2007-05-28 (+56d) | 2007-04-02 → 2007-06-27 (+86d) | 1d? → 23d |  | 41.5d → 0d |  |  |
| 75 | **Test** | 2007-04-02 → 2007-05-28 (+56d) | 2007-04-02 → 2007-05-28 (+56d) | 1d? → 1d |  | 41.5d → 22d |  |  |
| 78 | **Environment** | 2007-04-02 → 2007-05-28 (+56d) | 2007-04-02 → 2007-06-04 (+63d) | 1d? → 6d |  | 41.5d → 17d |  |  |
| 80 | **Set Up Tools** | 2007-04-02 → 2007-06-04 (+63d) | 2007-04-27 → 2007-06-04 (+38d) | 20d → 1d |  |  | none → 79 | baseline start 2007-04-02 → none; baseline finish 2007-04-27 → none |
| 81 | Set Up Maven | 2007-04-02 → 2007-06-04 (+63d) | 2007-04-09 → 2007-06-04 (+56d) | 4d → 1d |  | 38.62d → 17d |  | constraint start no earlier than 2007-04-02 → none; resources smatyas [50%]; smiller [50%] → none; baseline start 2007-04-02 → none; baseline finish 2007-04-09 → none |
| 82 | Set Up Continuous Integration | 2007-04-16 → 2007-06-04 (+49d) | 2007-04-16 → 2007-06-04 (+49d) |  |  | 7d → 17d |  | constraint start no earlier than 2007-04-16 → none; resources smatyas → none; baseline start 2007-04-16 → none; baseline finish 2007-04-16 → none |
| 83 | Set Up Eclipse | 2007-04-03 → 2007-06-04 (+62d) | 2007-04-06 → 2007-06-04 (+59d) |  |  | 39.5d → 17d |  | constraint start no earlier than 2007-04-03 → none; resources smiller [50%] → none; baseline start 2007-04-03 → none; baseline finish 2007-04-06 → none |
| 84 | Set Up Selenium | 2007-04-26 → 2007-06-04 (+39d) | 2007-04-27 → 2007-06-04 (+38d) | 2d → 1d |  | 0d → 17d | 82 → none | constraint finish no earlier than 2007-04-27 → none; resources smatyas → none; baseline start 2007-04-26 → none; baseline finish 2007-04-27 → none |
| 85 | Set Up Code Quality Tools | 2007-04-02 → 2007-06-04 (+63d) | 2007-04-10 → 2007-06-04 (+55d) | 3d → 1d |  | 38d → 17d |  | resources smatyas → none; baseline start 2007-04-02 → none; baseline finish 2007-04-09 → none |
| 86 | Configuration Management | 2007-04-02 → 2007-05-28 (+56d) | 2007-04-02 → 2007-05-28 (+56d) | 1d? → 1d |  | 41.5d → 22d |  |  |
| 87 | Elabortion Iteration 1 Complete | 2007-04-02 → 2007-05-28 (+56d) | 2007-04-02 → 2007-05-28 (+56d) | 1d? → 1d |  | 41.5d → 22d |  |  |
| 88 | **Construction Phase** | 2007-05-30 → 2007-06-28 (+29d) | 2007-05-31 → 2007-09-19 (+111d) | 1d? → 60d |  |  |  |  |
| 89 | Construction - Iteration 1 | 2007-05-30 → 2007-06-28 (+29d) | 2007-05-31 → 2007-07-25 (+55d) | 1d? → 4w |  |  |  |  |
| 90 | Construction - Iteration 2 | 2007-05-30 → 2007-07-26 (+57d) | 2007-05-31 → 2007-08-22 (+83d) | 1d? → 4w |  |  | none → 89 |  |
| 93 | **Transition Phase** | 2007-05-31 → 2007-09-20 (+112d) | 2007-06-01 → 2007-10-17 (+138d) | 1d? → 20d |  |  | 88 → 88, 92 |  |
| 94 | Transition - Iteration 1 | 2007-05-31 → 2007-09-20 (+112d) | 2007-06-01 → 2007-10-17 (+138d) | 1d? → 4w |  |  |  |  |

## Version 4 (saved 2007-05-18)

Note of the change: updated per meeting with Liming

Last finish stays 2007-10-17.

Added:

| ID | Task | Duration | Start | Finish |
| --- | --- | --- | --- | --- |
| 95 | **GPS-XAR 1.x** | 1d? | 2007-04-02 | 2007-04-02 |
| 96 | Elaboration | 1d? | 2007-04-02 | 2007-04-02 |
| 97 | Construction | 1d? | 2007-04-02 | 2007-04-02 |
| 98 | Transition | 1d? | 2007-04-02 | 2007-04-02 |

## Version 5 (saved 2007-05-18)

Note of the change: updated per meeting on 5.18.07

Last finish stays 2007-10-17.

Added:

| ID | Task | Duration | Start | Finish |
| --- | --- | --- | --- | --- |
| 70 | Investigate EBI vs. EVS Ontology | 1d? | 2007-05-28 | 2007-05-28 |

Changed:

| ID | Task | Duration |
| --- | --- | --- |
| 53 | **Elaboration Phase** | 23d → 23d? |
| 54 | **Elaboration - Iteration 1** | 23d → 23d? |
| 69 | **Analysis and Design** | 18d → 18d? |

## Version 6 (saved 2007-06-01)

Note of the change: updates to Elaboration 1 schedule and progress

Last finish 2007-10-17 → 2007-10-19 (+2d). Complete tasks 16 → 33.

Added:

| ID | Task | Duration | Start | Finish | Constraint |
| --- | --- | --- | --- | --- | --- |
| 40 | Establish Development Environment | 20d | 2007-05-01 A | 2007-05-28 A | finish no earlier than 2007-05-25 |
| 76 | Request Test Environment | 1d | 2007-06-26 | 2007-06-26 | start no earlier than 2007-06-26 |

Removed: 12 Release Software Development Plan; 30 Use Case Analysis

Changed:

| ID | Task | Start | Finish | Duration | Complete | Total float | Predecessors | Other |
| --- | --- | --- | --- | --- | --- | --- | --- | --- |
| 1 | **GPS-XAR 1.0** |  | 2007-10-17 → 2007-10-19 (+2d) | 143d? → 145d? | 18% → 40% |  |  |  |
| 2 | **Inception Phase** |  |  | 40d? → 41d? | 53% → 97% |  |  |  |
| 3 | **Inception Iteration 1** |  |  | 40d? → 41d? | 53% → 97% |  |  |  |
| 4 | **Project Management** |  | 2007-05-15 → 2007-05-18 A (+3d) | 28d? → 31d? | 53% → 100% | 0d → none |  |  |
| 7 | Plan for Next Iteration | 2007-05-11 → 2007-05-18 A (+7d) | 2007-05-11 → 2007-05-18 A (+7d) | 1d? → 1d | 0% → 100% | 2d → none | Release Software Development PlanFF → none |  |
| 8 | **Finalize Deliverables** |  | 2007-05-15 A |  | 43% → 100% | 0d → none |  |  |
| 10 | May Status Report | 2007-05-11 A | 2007-05-11 A |  | 0% → 100% | 2d → none |  |  |
| 11 | Release Risk List |  | 2007-05-11 A |  | 50% → 100% | 2d → none |  |  |
| 12 | **Requirements** |  | 2007-05-25 A |  | 95% → 100% | -0.9d → none |  |  |
| 18 | **Finalize Deliverables** |  | 2007-05-25 A |  | 79% → 100% | -0.9d → none |  |  |
| 21 | Finalize Vision Document |  | 2007-05-24 A |  | 90% → 100% | -7d → none |  |  |
| 22 | Finalize Supplementary Spec |  | 2007-05-25 A |  | 10% → 100% | -7.9d → none |  |  |
| 25 | **Analysis and Design** | 2007-04-02 A → 2007-05-07 A (+35d) | 2007-05-22 → 2007-05-28 A (+6d) | 37d? → 16d | 14% → 100% | 3d → none |  |  |
| 26 | Analyze PRIDE XML |  | 2007-05-21 A |  | 11% → 100% | 3d → none |  |  |
| 27 | Analyze CPAS 2.0 Data Model | 2007-04-02 A → 2007-05-07 A (+35d) | 2007-04-03 → 2007-05-11 A (+38d) | 2d → 5d | 25% → 100% | 38d → none |  |  |
| 28 | Compare PRIDE and XAR | 2007-05-22 A | 2007-05-22 → 2007-05-28 A (+6d) | 1d? → 5d | 0% → 100% | 3d → none |  |  |
| 29 | **Finalize Deliverables** | 2007-04-02 → 2007-05-24 A (+52d) | 2007-04-06 → 2007-05-28 A (+52d) | 5d → 3d | 0% → 100% | 35d → none |  |  |
| 30 | Release Candidate Software Architecture Document | 2007-04-02 → 2007-05-24 A (+52d) | 2007-04-06 → 2007-05-28 A (+52d) | 5d → 3d | 0% → 100% | 35d → none |  |  |
| 34 | **Test** |  |  |  | 7% → 33% | 8.48d → 17.48d |  |  |
| 36 | Analyze and Identify Test Approach | 2007-04-02 A | 2007-04-27 A |  | 0% → 100% | 8.48d → none |  |  |
| 39 | **Environment** |  | 2007-05-18 → 2007-05-28 A (+10d) | 30d → 36d | 51% → 100% | 0d → none |  |  |
| 42 | **Finalize Deliverables** |  | 2007-05-18 A |  | 49% → 100% | 0d → none |  |  |
| 43 | Release Development Case |  | 2007-05-14 A |  | 20% → 100% | 1.75d → none |  |  |
| 44 | Release Guidelines for the Project |  | 2007-04-17 A |  | 50% → 100% | 20.75d → none |  |  |
| 45 | Release Templates for the Project |  | 2007-05-18 A |  | 50% → 100% | -3d → none |  |  |
| 46 | **Configuration & Change Management** | 2007-04-02 A | 2007-05-16 A |  | 0% → 100% | -0.86d → none |  |  |
| 47 | Plan Project Configuration and Change Control | 2007-04-20 A | 2007-04-23 A |  | 0% → 100% | 16.75d → none |  |  |
| 48 | **Finalize Deliverables** | 2007-04-02 A | 2007-05-16 A |  | 0% → 100% | -0.86d → none |  |  |
| 49 | Release Configuration Management Plan | 2007-04-02 A | 2007-05-16 A |  | 0% → 100% | -0.5d → none |  |  |
| 50 | G-Forge Implementation of the Change Control Process | 2007-04-02 A | 2007-05-16 A |  | 0% → 100% | -0.86d → none |  |  |
| 51 | Inception Complete | 2007-05-28 A | 2007-05-28 A |  | 0% → 100% | -8d → none |  |  |
| 52 | **Elaboration Phase** | 2007-05-28 → 2007-05-29 A (+1d) | 2007-06-27 → 2007-06-29 (+2d) | 23d? → 24d | 0% → 9% |  |  |  |
| 53 | **Elaboration - Iteration 1** | 2007-05-28 → 2007-05-29 A (+1d) | 2007-06-27 → 2007-06-29 (+2d) | 23d? → 24d | 0% → 9% |  |  |  |
| 54 | **Project Management** | 2007-05-28 → 2007-05-29 (+1d) |  | 9d → 8d |  | 14d → 16d |  |  |
| 55 | Iteration Post Mortem - Inception | 2007-05-28 → 2007-05-29 (+1d) | 2007-05-30 → 2007-05-31 (+1d) |  |  | 20.5d → 21.5d |  |  |
| 56 | Plan Iteration | 2007-05-28 → 2007-05-29 (+1d) | 2007-05-28 → 2007-05-29 (+1d) |  |  | 22d → 23d |  |  |
| 58 | Plan for Next Iteration | 2007-05-28 → 2007-05-29 (+1d) | 2007-05-28 → 2007-05-29 (+1d) |  |  | 22d → 23d |  |  |
| 59 | **Finalize Deliverables** | 2007-05-28 → 2007-05-29 (+1d) | 2007-05-28 → 2007-05-29 (+1d) |  |  | 22d → 23d |  |  |
| 60 | Update Project Plan | 2007-05-28 → 2007-05-29 (+1d) | 2007-05-28 → 2007-05-29 (+1d) |  |  | 22d → 23d |  |  |
| 61 | Update Risk List | 2007-05-28 → 2007-05-29 (+1d) | 2007-05-28 → 2007-05-29 (+1d) |  |  | 22d → 23d |  |  |
| 62 | **Requirements** | 2007-05-28 → 2007-05-29 A (+1d) | 2007-05-29 → 2007-06-06 (+8d) | 2d → 7d | 0% → 28% | 21d → 17d |  |  |
| 63 | Incorporate Stakeholder Comments into Vision and Supplemental Specs | 2007-05-28 → 2007-05-29 (+1d) | 2007-05-29 → 2007-05-30 (+1d) |  |  | 21d → 22d |  |  |
| 64 | **Finalize Deliverables** | 2007-05-28 → 2007-05-29 A (+1d) | 2007-05-28 → 2007-06-06 (+9d) | 1d → 7d | 0% → 36% | 22d → 17d |  |  |
| 65 | Detail Registration and Login UC | 2007-05-28 → 2007-05-29 A (+1d) | 2007-05-28 → 2007-06-04 (+7d) | 1d → 5d | 0% → 50% | 22d → 17d |  | constraint none → finish no earlier than 2007-06-04 |
| 66 | Detail Create Annotated Proteomic Experiment File UC | 2007-05-28 → 2007-06-05 (+8d) | 2007-05-28 → 2007-06-05 (+8d) |  |  | 22d → 17d | none → 65 |  |
| 67 | Parse and Validate Proteomic Experiment File UC | 2007-05-28 → 2007-06-06 (+9d) | 2007-05-28 → 2007-06-06 (+9d) |  |  | 22d → 17d | none → 66 |  |
| 68 | **Analysis and Design** | 2007-05-28 → 2007-05-29 A (+1d) | 2007-06-20 → 2007-06-21 (+1d) | 18d? → 18d | 0% → 17% | 0d → 6d |  |  |
| 69 | Investigate EBI vs. EVS Ontology | 2007-05-28 → 2007-05-29 (+1d) | 2007-05-28 → 2007-06-04 (+7d) | 1d? → 5d |  | 22d → 19d |  |  |
| 70 | Object Model for Experiment Annotation | 2007-05-28 → 2007-05-29 A (+1d) | 2007-06-06 → 2007-06-07 (+1d) |  | 0% → 50% | 0d → 6d |  |  |
| 71 | Design of Conversion to XAR or PRIDE | 2007-06-07 → 2007-06-08 (+1d) | 2007-06-20 → 2007-06-21 (+1d) |  |  | 0d → 6d |  |  |
| 72 | **Implementation** | 2007-05-28 → 2007-06-13 (+16d) | 2007-06-27 → 2007-06-26 (-1d) | 23d → 10d |  |  |  |  |
| 73 | Representative XML Produced | 2007-05-28 → 2007-06-13 (+16d) | 2007-05-28 → 2007-06-19 (+22d) | 1d → 5d |  | 22d → 0d |  | constraint none → start no earlier than 2007-06-13 |
| 74 | UI for Experiment Annotation | 2007-06-21 → 2007-06-20 (-1d) | 2007-06-27 → 2007-06-26 (-1d) |  |  |  | 71 → 73 |  |
| 75 | **Test** | 2007-05-28 → 2007-05-29 (+1d) | 2007-05-28 → 2007-06-29 (+32d) | 1d → 24d |  | 22d → 0d |  |  |
| 77 | Produce Test Plan | 2007-05-28 → 2007-05-29 (+1d) | 2007-05-28 → 2007-05-29 (+1d) |  |  | 22d → 23d |  |  |
| 78 | Junit Tests for Targeted UC | 2007-05-28 → 2007-06-27 (+30d) | 2007-05-28 → 2007-06-29 (+32d) | 1d → 3d |  | 22d → 0d | none → 74 |  |
| 79 | **Environment** | 2007-05-28 → 2007-05-29 (+1d) | 2007-06-04 → 2007-06-05 (+1d) |  |  | 17d → 18d |  |  |
| 80 | Development Environment Available | 2007-05-28 → 2007-05-29 (+1d) | 2007-06-01 → 2007-06-04 (+3d) |  |  | 17d → 18d |  |  |
| 81 | **Set Up Tools** | 2007-06-04 → 2007-06-05 (+1d) | 2007-06-04 → 2007-06-05 (+1d) |  |  | 17d → 18d |  |  |
| 82 | Set Up Maven | 2007-06-04 → 2007-06-05 (+1d) | 2007-06-04 → 2007-06-05 (+1d) |  |  | 17d → 18d |  |  |
| 83 | Set Up Continuous Integration | 2007-06-04 → 2007-06-05 (+1d) | 2007-06-04 → 2007-06-05 (+1d) |  |  | 17d → 18d |  |  |
| 84 | Set Up Eclipse | 2007-06-04 → 2007-06-05 (+1d) | 2007-06-04 → 2007-06-05 (+1d) |  |  | 17d → 18d |  |  |
| 85 | Set Up Selenium | 2007-06-04 → 2007-06-05 (+1d) | 2007-06-04 → 2007-06-05 (+1d) |  |  | 17d → 18d |  |  |
| 86 | Set Up Code Quality Tools | 2007-06-04 → 2007-06-05 (+1d) | 2007-06-04 → 2007-06-05 (+1d) |  |  | 17d → 18d |  |  |
| 87 | Configuration Management | 2007-05-28 → 2007-05-29 (+1d) | 2007-05-28 → 2007-05-29 (+1d) |  |  | 22d → 23d |  |  |
| 88 | Elabortion Iteration 1 Complete | 2007-05-28 → 2007-05-29 (+1d) | 2007-05-28 → 2007-05-29 (+1d) |  |  | 22d → 23d |  |  |
| 89 | **Construction Phase** | 2007-06-28 → 2007-07-02 (+4d) | 2007-09-19 → 2007-09-21 (+2d) |  |  |  |  |  |
| 90 | Construction - Iteration 1 | 2007-06-28 → 2007-07-02 (+4d) | 2007-07-25 → 2007-07-27 (+2d) |  |  |  |  |  |
| 91 | Construction - Iteration 2 | 2007-07-26 → 2007-07-30 (+4d) | 2007-08-22 → 2007-08-24 (+2d) |  |  |  |  |  |
| 92 | Construction - Iteration 3 | 2007-08-23 → 2007-08-27 (+4d) | 2007-09-19 → 2007-09-21 (+2d) |  |  |  |  |  |

| ID | Task | Start | Finish |
| --- | --- | --- | --- |
| 93 | Release Candidate Delivered to QA | 2007-06-28 → 2007-07-02 (+4d) | 2007-06-28 → 2007-07-02 (+4d) |
| 94 | **Transition Phase** | 2007-09-20 → 2007-09-24 (+4d) | 2007-10-17 → 2007-10-19 (+2d) |
| 95 | Transition - Iteration 1 | 2007-09-20 → 2007-09-24 (+4d) | 2007-10-17 → 2007-10-19 (+2d) |
