# GPS-XAR

How a schedule from MS Project changed from version to version. A marks actual dates.

## Version 1 (saved 2007-06-26)

Note of the change: renamed protexpress from gpsxar

| ID | WBS | Task | Duration | Start | Finish | Predecessors | Complete | Total float | Constraint |
| --- | --- | --- | --- | --- | --- | --- | --- | --- | --- |
| 1 | 1 | **protExpress 1.0** | 157d? | 2007-04-02 A | 2007-11-06 |  | 44% | 0d |  |
| 2 | 1.1 | **Inception Phase** | 41d? | 2007-04-02 A | 2007-05-28 |  | 97% | 0d |  |
| 3 | 1.1.1 | **Inception Iteration 1** | 41d? | 2007-04-02 A | 2007-05-28 |  | 97% | 0d |  |
| 4 | 1 | **Project Management** | 31d? | 2007-04-06 A | 2007-05-18 A |  | 100% |  |  |
| 5 |  | Plan the project | 1d? | 2007-04-06 A | 2007-04-06 A |  | 100% |  | start no earlier than 2007-04-02 |
| 6 |  | Plan Remainder of Initial Iteration | 1d? | 2007-04-19 A | 2007-04-19 A |  | 100% |  | start no earlier than 2007-04-19 |
| 7 |  | Plan for Next Iteration | 1d | 2007-05-18 A | 2007-05-18 A |  | 100% |  |  |
| 8 | 1.1.1.1.4 | **Finalize Deliverables** | 3d? | 2007-05-11 A | 2007-05-15 A |  | 100% |  |  |
| 9 |  | April Status Report | 1d? | 2007-05-15 A | 2007-05-15 A |  | 100% |  | start no earlier than 2007-05-15 |
| 10 |  | May Status Report | 1d? | 2007-05-11 A | 2007-05-11 A |  | 100% |  | start no earlier than 2007-05-11 |
| 11 |  | Release Risk List | 1d? | 2007-05-11 A | 2007-05-11 A |  | 100% |  | start no earlier than 2007-05-11 |
| 12 | 3 | **Requirements** | 39.9d? | 2007-04-02 A | 2007-05-25 A |  | 100% |  |  |
| 13 |  | Elicit Stakeholder Needs | 5.38d | 2007-04-06 A | 2007-04-13 A | 5SS | 100% |  |  |
| 14 |  | Identify and Describe Use Cases | 7d | 2007-04-18 A | 2007-05-04 A |  | 100% |  | finish no earlier than 2007-04-20 |
| 15 |  | Refine the System Definition | 2.5d | 2007-05-04 A | 2007-05-17 A | 6, 14 | 100% |  | start no earlier than 2007-04-18 |
| 16 | 1.1.1.2.4 | **Implement Requirement and Test Traceability** | 4.5d | 2007-04-16 A | 2007-04-20 A |  | 100% |  |  |
| 17 |  | Determine Approach | 2.25d | 2007-04-16 A | 2007-04-20 A |  | 100% |  | start no earlier than 2007-04-16 |
| 18 | 1.1.1.2.5 | **Finalize Deliverables** | 39.9d? | 2007-04-02 A | 2007-05-25 A |  | 100% |  |  |
| 19 |  | Finalize ARC Document | 1d? | 2007-04-27 A | 2007-04-27 A |  | 100% |  | start no earlier than 2007-04-27 |
| 20 |  | Requirements Management Plan | 0.25d | 2007-05-11 A | 2007-05-11 A |  | 100% |  |  |
| 21 |  | Finalize Vision Document | 1d | 2007-05-14 A | 2007-05-24 A |  | 100% |  |  |
| 22 |  | Finalize Supplementary Spec | 1d | 2007-05-11 A | 2007-05-25 A | 21 | 100% |  |  |
| 23 |  | Produce Use Case Summary | 0.5d | 2007-04-02 A | 2007-04-02 A |  | 100% |  |  |
| 24 |  | Finalize Use Case Model | 1d | 2007-04-27 A | 2007-05-11 A | 14 | 100% |  |  |
| 25 | 4 | **Analysis and Design** | 16d | 2007-05-07 A | 2007-05-28 A |  | 100% |  |  |
| 26 |  | Analyze PRIDE XML | 9d | 2007-05-09 A | 2007-05-21 A |  | 100% |  |  |
| 27 |  | Analyze CPAS 2.0 Data Model | 5d | 2007-05-07 A | 2007-05-11 A |  | 100% |  |  |
| 28 |  | Compare PRIDE and XAR | 5d | 2007-05-22 A | 2007-05-28 A | 26 | 100% |  |  |
| 29 | 1.1.1.3.4 | **Finalize Deliverables** | 3d | 2007-05-24 A | 2007-05-28 A |  | 100% |  |  |
| 30 |  | Release Candidate Software Architecture Document | 3d | 2007-05-24 A | 2007-05-28 A |  | 100% |  |  |
| 31 | 1.1.1.4 | **Implementation** | 2d | 2007-04-02 A | 2007-04-03 A |  | 100% |  |  |
| 32 |  | Install CPAS Locally/Reverse Engineer Data Model | 2d | 2007-04-02 A | 2007-04-03 A |  | 100% |  |  |
| 33 |  | Structure the Implementation Model | 2d | 2007-04-02 A | 2007-04-03 A |  | 100% |  | start no earlier than 2007-04-09 |
| 34 | 5 | **Test** | 23.52d | 2007-04-02 A | 2007-05-03 |  | 33% | 17.48d |  |
| 35 |  | Meet with Indepdent QA | 2h | 2007-04-02 A | 2007-04-02 A |  | 100% |  | finish no later than 2007-04-27 |
| 36 |  | Analyze and Identify Test Approach | 1d | 2007-04-02 A | 2007-04-27 A |  | 100% |  |  |
| 37 | 1.1.1.5.3 | **Finalize Deliverables** | 4.02d | 2007-04-27 | 2007-05-03 |  |  | 17.48d |  |
| 38 |  | Release Test Plan | 2.53d | 2007-04-27 | 2007-05-03 | 36 |  | 17.48d |  |
| 39 | 6 | **Environment** | 36d | 2007-04-09 A | 2007-05-28 A |  | 100% |  |  |
| 40 |  | Establish Development Environment | 20d | 2007-05-01 A | 2007-05-28 A |  | 100% |  | finish no earlier than 2007-05-25 |
| 41 |  | Launch Development Process | 3h | 2007-04-09 A | 2007-04-09 A |  | 100% |  | start no earlier than 2007-04-09 |
| 42 | 1.1.1.6.3 | **Finalize Deliverables** | 25d | 2007-04-16 A | 2007-05-18 A |  | 100% |  |  |
| 43 |  | Release Development Case | 0.25d | 2007-05-14 A | 2007-05-14 A |  | 100% |  | start no earlier than 2007-05-14 |
| 44 |  | Release Guidelines for the Project | 1.25d | 2007-04-16 A | 2007-04-17 A |  | 100% |  | start no earlier than 2007-04-16 |
| 45 |  | Release Templates for the Project | 9d | 2007-04-17 A | 2007-05-18 A |  | 100% |  | finish no earlier than 2007-04-13 |
| 46 | 7 | **Configuration & Change Management** | 32.11d | 2007-04-02 A | 2007-05-16 A |  | 100% |  |  |
| 47 |  | Plan Project Configuration and Change Control | 1d | 2007-04-20 A | 2007-04-23 A |  | 100% |  | finish no earlier than 2007-04-20 |
| 48 | 1.1.1.7.2 | **Finalize Deliverables** | 32.11d | 2007-04-02 A | 2007-05-16 A |  | 100% |  |  |
| 49 |  | Release Configuration Management Plan | 0.75d | 2007-04-02 A | 2007-05-16 A |  | 100% |  |  |
| 50 |  | G-Forge Implementation of the Change Control Process | 2d | 2007-04-02 A | 2007-05-16 A |  | 100% |  |  |
| 51 |  | Inception Complete | 0d | 2007-05-28 A | 2007-05-28 A | 4, 5, 18, 8, 37, 42, 48 | 100% |  | start no earlier than 2007-05-28 |
| 52 | 1.2 | **Elaboration Phase** | 49d? | 2007-05-29 A | 2007-08-03 | 3 | 35% | 67d |  |
| 53 | 1.2.1 | **Elaboration - Iteration 1** | 32d | 2007-05-29 A | 2007-07-11 |  | 59% | 84d |  |
| 54 | 1.2.1.1 | **Project Management** | 8d | 2007-05-29 A | 2007-06-07 | 51 | 81% | 108d |  |
| 55 |  | Iteration Post Mortem - Inception | 20h | 2007-05-29 A | 2007-05-31 A |  | 100% |  | start no earlier than 2007-05-23 |
| 56 |  | Plan Iteration | 1d | 2007-05-29 A | 2007-05-29 A |  | 100% |  |  |
| 57 |  | Trip to Indianapolis - CPAS | 4d | 2007-06-04 A | 2007-06-07 A |  | 100% |  | start no earlier than 2007-06-04 |
| 58 |  | Plan for Next Iteration | 1d | 2007-05-29 A | 2007-05-29 |  | 50% | 115d |  |
| 59 | 1.2.1.1.5 | **Finalize Deliverables** | 1d | 2007-05-29 A | 2007-05-29 |  | 25% | 115d |  |
| 60 |  | Update Project Plan | 1d | 2007-05-29 A | 2007-05-29 |  | 50% | 115d |  |
| 61 |  | Update Risk List | 1d | 2007-05-29 | 2007-05-29 |  |  | 115d |  |
| 62 | 1.2.1.2 | **Requirements** | 9d | 2007-05-29 A | 2007-06-08 |  | 73% | 107d |  |
| 63 |  | Incorporate Stakeholder Comments into Vision and Supplemental Specs | 2d | 2007-05-29 A | 2007-05-30 A |  | 100% |  |  |
| 64 | 1.2.1.2.2 | **Finalize Deliverables** | 9d | 2007-05-29 A | 2007-06-08 |  | 67% | 107d |  |
| 65 |  | Detail Registration and Login UC | 5d | 2007-05-29 A | 2007-06-04 |  | 50% | 111d | finish no earlier than 2007-06-04 |
| 66 |  | Detail Manage Protocol | 3d | 2007-06-05 A | 2007-06-07 A | 65 | 100% |  |  |
| 67 |  | Parse and Validate Proteomic Experiment File UC | 1d | 2007-06-08 A | 2007-06-08 | 66 | 50% | 107d |  |
| 68 | 1.2.1.3 | **Analysis and Design** | 21d | 2007-05-29 A | 2007-06-26 |  | 85% | 95d |  |
| 69 |  | Investigate EBI vs. EVS Ontology | 5d | 2007-05-29 A | 2007-06-04 A |  | 100% |  |  |
| 70 |  | Object Model for Experiment Annotation | 8d | 2007-06-08 A | 2007-06-19 A | 57 | 100% |  |  |

| ID | WBS | Task | Duration | Start | Finish | Predecessors | Complete | Total float | Constraint |
| --- | --- | --- | --- | --- | --- | --- | --- | --- | --- |
| 71 |  | Create Data Model | 5d | 2007-06-20 A | 2007-06-26 | 70 | 15% | 95d |  |
| 72 |  | Design of Conversion to XAR or PRIDE | 10d | 2007-06-08 A | 2007-06-21 A | 70 | 100% |  |  |
| 73 | 1.2.1.4 | **Implementation** | 18d | 2007-06-13 A | 2007-07-06 |  | 26% | 84d |  |
| 74 |  | Create Database | 3d | 2007-06-14 A | 2007-06-18 A |  | 100% |  |  |
| 75 |  | Representative XML Produced | 13d | 2007-06-13 A | 2007-06-29 |  | 19% | 0d | start no earlier than 2007-06-13 |
| 76 |  | UI for Protocol Annotation | 5d | 2007-07-02 | 2007-07-06 | 75 |  | 84d |  |
| 77 | 1.2.1.5 | **Test** | 32d | 2007-05-29 A | 2007-07-11 |  | 20% | 84d |  |
| 78 |  | Request Test Environment | 1d | 2007-06-26 A | 2007-06-26 A |  | 100% |  | start no earlier than 2007-06-26 |
| 79 |  | Produce Test Plan | 1d | 2007-05-29 | 2007-05-29 |  |  | 115d |  |
| 80 |  | Junit Tests for Targeted UC | 3d | 2007-07-09 | 2007-07-11 | 76 |  | 84d |  |
| 81 | 1.2.1.6 | **Environment** | 7.75d | 2007-05-29 A | 2007-06-07 |  | 63% | 108.25d |  |
| 82 |  | Development Environment Available | 1w | 2007-05-29 A | 2007-06-04 A |  | 100% |  |  |
| 83 | 1.2.1.6.2 | **Set Up Tools** | 2.75d | 2007-06-05 A | 2007-06-07 | 82 | 25% | 108.25d |  |
| 84 |  | Set Up Maven | 1d | 2007-06-05 | 2007-06-05 |  |  | 110d |  |
| 85 |  | Set Up Continuous Integration | 1d | 2007-06-05 | 2007-06-05 | 82 |  | 110d |  |
| 86 |  | Set Up Eclipse | 1d | 2007-06-05 A | 2007-06-05 A | 85 | 100% |  |  |
| 87 |  | Set Up Selenium | 1d | 2007-06-06 | 2007-06-06 | 86 |  | 108.25d |  |
| 88 |  | Set Up Code Quality Tools | 1d | 2007-06-05 A | 2007-06-07 | 87 | 25% | 108.25d |  |
| 89 |  | Elabortion Iteration 1 Complete | 0d | 2007-06-29 | 2007-06-29 | 75 |  | 0d |  |
| 90 |  | Vacation | 5d | 2007-07-02 | 2007-07-06 | 89 |  | 0d |  |
| 91 | 1.2.2 | **Elaboration - Iteration 2** | 20d? | 2007-07-09 | 2007-08-03 | 90 |  | 0d |  |
| 92 | 1.2.2.1 | **Project Management** | 1d | 2007-07-09 | 2007-07-09 |  |  | 86d |  |
| 93 |  | Iteration Post Mortem - E1 | 1d | 2007-07-09 | 2007-07-09 |  |  | 86d |  |
| 94 |  | Plan Iteration | 1d | 2007-07-09 | 2007-07-09 |  |  | 86d |  |
| 95 |  | Plan for Next Iteration | 1d | 2007-07-09 | 2007-07-09 |  |  | 86d |  |
| 96 | 1.2.2.2 | **Requirements** | 2d | 2007-07-09 | 2007-07-10 |  |  | 85d |  |
| 97 |  | Incorporate Stakeholder Use Case Feedback | 2d | 2007-07-09 | 2007-07-10 |  |  | 85d |  |
| 98 | 1.2.2.2.2 | **Finalize Deliverables** | 2d | 2007-07-09 | 2007-07-10 |  |  | 85d |  |
| 99 |  | Detail Registration Use Case | 1d | 2007-07-09 | 2007-07-09 |  |  | 86d |  |
| 100 |  | Detail Manage Experiments | 2d | 2007-07-09 | 2007-07-10 |  |  | 85d |  |
| 101 |  | Validation Requirements of XAR and Pride | 2d | 2007-07-09 | 2007-07-10 |  |  | 85d |  |
| 102 | 1.2.2.3 | **Analysis and Design** | 7d | 2007-07-09 | 2007-07-17 |  |  | 0d |  |
| 103 |  | Update Software Architecture Document | 2d | 2007-07-09 | 2007-07-10 |  |  | 0d |  |
| 104 |  | Refine Design of XAR and Pride Conversion | 5d | 2007-07-11 | 2007-07-17 | 103 |  | 0d |  |
| 105 |  | Specify EVS Access | 3d | 2007-07-09 | 2007-07-11 |  |  | 72d |  |
| 106 |  | Specify EBI Access Method | 3d | 2007-07-12 | 2007-07-16 | 105 |  | 81d |  |
| 107 | 1.2.2.4 | **Implementation** | 20d | 2007-07-09 | 2007-08-03 |  |  | 67d |  |
| 108 |  | Produce Representative XML | 5d | 2007-07-09 | 2007-07-13 |  |  | 82d |  |
| 109 |  | Build Manage Protocol UI | 8d | 2007-07-09 | 2007-07-18 |  |  | 67d |  |
| 110 |  | Build Manage Experiments UI | 12d | 2007-07-19 | 2007-08-03 | 105, 109 |  | 67d |  |
| 111 | 1.2.2.5 | **Test** | 10d | 2007-07-09 | 2007-07-20 |  |  | 77d |  |
| 112 |  | Produce Test Plan | 1d | 2007-07-09 | 2007-07-09 |  |  | 86d |  |
| 113 |  | Junit Tests for Targeted UC | 2d | 2007-07-19 | 2007-07-20 | 109 |  | 77d |  |
| 114 | 1.2.2.6 | **Environment** | 2d | 2007-07-09 | 2007-07-10 |  |  | 85d |  |
| 115 |  | Test Environment Available | 1d | 2007-07-09 | 2007-07-09 |  |  | 86d |  |
| 116 |  | Installation Document | 1d | 2007-07-09 | 2007-07-09 |  |  | 86d |  |
| 117 | 1.2.2.6.3 | **Set Up Tools** | 2d | 2007-07-09 | 2007-07-10 |  |  | 85d |  |
| 118 |  | Set Up Continuous Integration | 2d | 2007-07-09 | 2007-07-10 |  |  | 85d |  |
| 119 |  | Set Up Selenium | 2d | 2007-07-09 | 2007-07-10 |  |  | 85d |  |
| 120 |  | Set Up Code Quality Tools | 2d | 2007-07-09 | 2007-07-10 |  |  | 85d |  |
| 121 | 1.2.2.7 | **Configuration Management** | 1d? | 2007-07-09 | 2007-07-09 |  |  | 86d |  |
| 122 |  | Define Configuration Management Plan | 1d? | 2007-07-09 | 2007-07-09 |  |  | 86d |  |
| 123 |  | Elaboration Iteration 2 Complete | 0d | 2007-08-03 | 2007-08-03 | 110 |  | 67d |  |
| 124 | 1.3 | **Construction Phase** | 60d | 2007-07-18 | 2007-10-09 | 104 |  | 0d |  |
| 125 |  | Construction - Iteration 1 | 4w | 2007-07-18 | 2007-08-14 |  |  | 0d |  |
| 126 |  | Construction - Iteration 2 | 4w | 2007-08-15 | 2007-09-11 | 125 |  | 0d |  |
| 127 |  | Construction - Iteration 3 | 4w | 2007-09-12 | 2007-10-09 | 126 |  | 0d |  |
| 128 |  | Release Candidate Delivered to QA | 1d | 2007-07-18 | 2007-07-18 |  |  | 59d |  |
| 129 | 1.4 | **Transition Phase** | 20d | 2007-10-10 | 2007-11-06 | 124, 128 |  | 0d |  |
| 130 |  | Transition - Iteration 1 | 4w | 2007-10-10 | 2007-11-06 |  |  | 0d |  |
| 131 | 2 | **protExpress 1.x** | 1d? | 2007-04-02 | 2007-04-02 |  |  | 156d |  |
| 132 |  | Elaboration | 1d? | 2007-04-02 | 2007-04-02 |  |  | 156d |  |
| 133 |  | Construction | 1d? | 2007-04-02 | 2007-04-02 |  |  | 156d |  |
| 134 |  | Transition | 1d? | 2007-04-02 | 2007-04-02 |  |  | 156d |  |

## Version 2 (saved 2008-04-09)

Note of the change: initial update of schedule

Last finish 2007-11-06 → 2008-07-18 (+255d).

Added:

| ID | Task | Duration | Start | Finish | Predecessors | Constraint |
| --- | --- | --- | --- | --- | --- | --- |
| 126 | **Implementation** | 60d | 2008-03-24 | 2008-06-13 | 125 |  |
| 127 | **Search Repository UC** | 12d | 2008-03-24 | 2008-04-08 |  |  |
| 128 | **Search Experiments** | 4d | 2008-03-24 | 2008-03-27 |  |  |
| 129 | Implement Experiment Search | 4d | 2008-03-24 | 2008-03-27 |  | start no earlier than 2008-03-24 |
| 130 | QA deliver | 1d | 2008-03-28 | 2008-03-28 | 129 |  |
| 131 | Bug Fixes | 1d | 2008-03-31 | 2008-03-31 | 130 |  |
| 132 | **Search Protocols** | 4d | 2008-04-01 | 2008-04-04 |  |  |
| 133 | Implement protocol Search | 4d | 2008-04-01 | 2008-04-04 | 131 |  |
| 134 | QA Delivery | 1d | 2008-04-07 | 2008-04-07 | 132 |  |
| 135 | Bug Fixes | 1d | 2008-04-08 | 2008-04-08 | 133, 134 |  |
| 136 | **Manage Experiments UC** | 40d | 2008-04-09 | 2008-06-03 | 135 |  |
| 137 | **Create new Experiment** | 9d | 2008-04-09 | 2008-04-21 |  |  |
| 138 | Overview page | 1d | 2008-04-09 | 2008-04-09 |  |  |
| 139 | Add/Edit Protocols Page | 2d | 2008-04-10 | 2008-04-11 | 138 |  |
| 140 | Add/Edit Inputs Page | 2d | 2008-04-14 | 2008-04-15 | 139 |  |
| 141 | Add/Edit Outputs Page | 2d | 2008-04-16 | 2008-04-17 | 140 |  |
| 142 | Review Protocol Page | 1d | 2008-04-18 | 2008-04-18 | 141 |  |
| 143 | Experiment Summary Page | 1d | 2008-04-21 | 2008-04-21 | 142 |  |
| 144 | Repeat Experiment | 2d | 2008-04-22 | 2008-04-23 | 143, 137 |  |
| 145 | QA Delivery | 1d | 2008-04-22 | 2008-04-22 | 137 |  |
| 146 | Bug Fixes | 1d | 2008-04-23 | 2008-04-23 | 145 |  |
| 147 | **Tree View** | 25d | 2008-04-24 | 2008-05-28 | 146 |  |
| 148 | **implement Tree using struts** | 25d | 2008-04-24 | 2008-05-28 |  |  |
| 149 | Design Tree Mechanism | 4d | 2008-04-24 | 2008-04-29 | 146 |  |
| 150 | **Tree Read Only** | 6d | 2008-04-30 | 2008-05-07 | 149 |  |
| 151 | Overview page | 1d | 2008-04-30 | 2008-04-30 |  |  |
| 152 | Protocols Page | 1d | 2008-05-01 | 2008-05-01 | 151 |  |
| 153 | Inputs Page | 1d | 2008-05-02 | 2008-05-02 | 152 |  |
| 154 | Outputs Page | 1d | 2008-05-05 | 2008-05-05 | 153 |  |
| 155 | Review Protocol Page | 1d | 2008-05-06 | 2008-05-06 | 154 |  |
| 156 | Experiment Summary Page | 1d | 2008-05-07 | 2008-05-07 | 155 |  |
| 157 | XAR File download | 2d | 2008-05-08 | 2008-05-09 | 150 |  |
| 158 | QA delivery | 1d | 2008-05-12 | 2008-05-12 | 157 |  |
| 159 | Bug Fixes | 1d | 2008-05-13 | 2008-05-13 | 158 |  |
| 160 | Stage Delivery?? | 1d | 2008-05-14 | 2008-05-14 | 159 |  |
| 162 | Tree Edit | 9d | 2008-05-15 | 2008-05-27 | 160 |  |
| 164 | Overview page | 1d | 2008-05-15 | 2008-05-15 |  |  |
| 166 | **Add/Edit Protocols Page** | 2d | 2008-05-16 | 2008-05-19 | 164 |  |
| 167 | **Add/Edit Inputs Page** | 2d | 2008-05-20 | 2008-05-21 | 166 |  |
| 168 | **Add/Edit Outputs Page** | 2d | 2008-05-22 | 2008-05-23 | 167 |  |
| 169 | **Review Protocol Page** | 1d | 2008-05-26 | 2008-05-26 | 168 |  |
| 170 | Experiment Summary Page | 1d | 2008-05-27 | 2008-05-27 | 169 |  |
| 171 | Delete Expeirment Run | 1d | 2008-05-28 | 2008-05-28 | 162 |  |
| 172 | QA delivery | 1d | 2008-05-29 | 2008-05-29 | 147 |  |
| 173 | Bug Fixes | 2d | 2008-05-30 | 2008-06-02 | 172 |  |
| 174 | QA Delivery - after bug fixes | 1d | 2008-06-03 | 2008-06-03 | 173 |  |
| 175 | **Register User UC** | 5d | 2008-06-04 | 2008-06-10 | 136 |  |
| 176 | **LDAP Integration for Registration** | 2d | 2008-06-04 | 2008-06-05 |  |  |
| 177 | Account Registration (email) | 1d | 2008-06-04 | 2008-06-04 |  |  |
| 178 | Implement UI (2 screens) | 1d | 2008-06-05 | 2008-06-05 | 177 |  |
| 179 | **User Management** | 3d | 2008-06-06 | 2008-06-10 | 176 |  |
| 180 | Implement User Add/Edit Page | 3d | 2008-06-06 | 2008-06-10 |  |  |
| 181 | QA delivery | 1d | 2008-06-11 | 2008-06-11 | 175 |  |
| 182 | Bug Fixes | 2d | 2008-06-12 | 2008-06-13 | 181 |  |
| 183 | **Final Product Delivery** | 5d | 2008-06-16 | 2008-06-20 | 182 |  |
| 184 | Zope Site Setup | 3d | 2008-06-16 | 2008-06-18 | 177 |  |
| 185 | Deploy to Production | 2d | 2008-06-19 | 2008-06-20 | 184 |  |

Changed:

| ID | Task | Start | Finish | Duration | Complete | Total float | Predecessors |
| --- | --- | --- | --- | --- | --- | --- | --- |
| 1 | **protExpress 1.0** |  | 2007-11-06 → 2008-07-18 (+255d) | 157d? → 340d? | 44% → 37% |  |  |
| 124 | **Construction Phase** |  | 2007-10-09 → 2008-06-20 (+255d) | 60d → 243d |  |  |  |
| 186 | Construction - Iteration 2 | 2007-08-15 → 2008-03-28 (+226d) | 2007-09-11 → 2008-04-24 (+226d) |  |  | 0d → 21d | 125 → 128 |
| 187 | Construction - Iteration 3 | 2007-09-12 → 2008-04-25 (+226d) | 2007-10-09 → 2008-05-22 (+226d) |  |  | 0d → 21d |  |
| 189 | **Transition Phase** | 2007-10-10 → 2008-06-23 (+257d) | 2007-11-06 → 2008-07-18 (+255d) |  |  |  |  |
| 190 | Transition - Iteration 1 | 2007-10-10 → 2008-06-23 (+257d) | 2007-11-06 → 2008-07-18 (+255d) |  |  |  |  |

## Version 3 (saved 2008-04-22)

Note of the change: updated schedule with paren/child notation

Last finish 2008-07-18 → 2008-07-14 (-4d).

Added:

| ID | Task | Duration | Start | Finish | Predecessors |
| --- | --- | --- | --- | --- | --- |
| 144 | Parent/Child Notation | 2d | 2008-04-22 | 2008-04-23 | 143 |
| 145 | QA Delivery | 1d | 2008-04-24 | 2008-04-24 | 144 |
| 148 | XAR File Download | 2d | 2008-04-30 | 2008-05-01 | 147 |
| 183 | Bug Fixes | 2d | 2008-06-04 | 2008-06-05 | 182 |
| 190 | **protExpress 1.x** | 1d | 2008-07-14 | 2008-07-14 | 188 |
| 191 | **Tree Edit** | 1d | 2008-07-14 | 2008-07-14 |  |
| 192 | **Stage Delivery??** | 1d | 2008-07-14 | 2008-07-14 |  |

Removed: 157 XAR File download; 160 Stage Delivery??; 162 Tree Edit; 186 Construction - Iteration 2; 187 Construction - Iteration 3; 191 protExpress 1.x

Changed:

| ID | Task | Start | Finish | Duration | Complete | Total float | Predecessors | Other |
| --- | --- | --- | --- | --- | --- | --- | --- | --- |
| 1 | **protExpress 1.0** |  | 2008-07-18 → 2008-05-21 (-58d) | 340d? → 298d? | 37% → 45% | 0d → 38d |  |  |
| 6 | Plan Remainder of Initial Iteration |  |  |  |  |  | none → 5 |  |
| 7 | Plan for Next Iteration |  |  |  |  |  | none → 6 |  |
| 8 | **Finalize Deliverables** |  |  |  |  |  | none → 7 |  |
| 10 | May Status Report |  |  |  |  |  | none → 9 |  |
| 11 | Release Risk List |  |  |  |  |  | none → 10 |  |
| 12 | **Requirements** |  |  |  |  |  | none → 4 |  |
| 13 | Elicit Stakeholder Needs |  |  |  |  |  | 5SS → none |  |
| 14 | Identify and Describe Use Cases |  |  |  |  |  | none → 13 |  |
| 15 | Refine the System Definition |  |  |  |  |  | 6, 14 → 14 |  |
| 16 | **Implement Requirement and Test Traceability** |  |  |  |  |  | none → 15 |  |
| 18 | **Finalize Deliverables** |  |  |  |  |  | none → 16 |  |
| 20 | Requirements Management Plan |  |  |  |  |  | none → 19 |  |
| 21 | Finalize Vision Document |  |  |  |  |  | none → 20 |  |
| 23 | Produce Use Case Summary |  |  |  |  |  | none → 22 |  |
| 24 | Finalize Use Case Model |  |  |  |  |  | 14 → 23 |  |
| 25 | **Analysis and Design** |  |  |  |  |  | none → 12 |  |
| 27 | Analyze CPAS 2.0 Data Model |  |  |  |  |  | none → 26 |  |
| 28 | Compare PRIDE and XAR |  |  |  |  |  | 26 → 27 |  |
| 29 | **Finalize Deliverables** |  |  |  |  |  | none → 28 |  |
| 31 | **Implementation** |  |  |  |  |  | none → 25 |  |
| 33 | Structure the Implementation Model |  |  |  |  |  | none → 32 |  |
| 34 | **Test** |  |  |  |  | 17.48d → 141.84d | none → 31 |  |
| 36 | Analyze and Identify Test Approach |  |  |  |  |  | none → 35 |  |
| 37 | **Finalize Deliverables** |  |  |  |  | 17.48d → 141.84d | none → 36 |  |
| 38 | Release Test Plan |  |  |  |  | 17.48d → 141.84d | 36 → none |  |
| 39 | **Environment** |  |  |  |  |  | none → 34 |  |
| 41 | Launch Development Process |  |  |  |  |  | none → 40 |  |
| 42 | **Finalize Deliverables** |  |  |  |  |  | none → 41 |  |
| 44 | Release Guidelines for the Project |  |  |  |  |  | none → 43 |  |
| 45 | Release Templates for the Project |  |  |  |  |  | none → 44 |  |
| 46 | **Configuration & Change Management** |  | 2007-05-16 A → 2007-04-23 A (-23d) | 32.11d → 14.5d |  |  | none → 39 |  |
| 48 | **Finalize Deliverables** |  | 2007-05-16 A → 2007-04-06 A (-40d) | 32.11d → 4.12d |  |  | none → 47 |  |
| 49 | Release Configuration Management Plan |  | 2007-05-16 A → 2007-04-03 A (-43d) | 0.75d → 1d |  |  |  |  |
| 50 | G-Forge Implementation of the Change Control Process |  | 2007-05-16 A → 2007-04-06 A (-40d) | 2d → 1d |  |  | none → 49 |  |
| 51 | Inception Complete |  |  | 0d → 1d |  |  | 4, 5, 18, 8, 37, 42, 48 → 46 |  |
| 52 | **Elaboration Phase** |  | 2007-08-03 → 2007-10-25 (+83d) | 49d? → 107.5d? |  | 250d → 86.5d | 3 → 2 |  |
| 53 | **Elaboration - Iteration 1** |  | 2007-07-11 → 2007-08-02 (+22d) | 32d → 47.5d |  | 246d → 86.5d |  |  |
| 54 | **Project Management** |  | 2007-06-07 → 2007-06-11 (+4d) | 8d → 10d |  | 270d → 61.24d | 51 → none |  |
| 56 | Plan Iteration |  |  |  |  |  | none → 55 |  |
| 57 | Trip to Indianapolis - CPAS |  |  |  |  |  | none → 56 |  |
| 58 | Plan for Next Iteration |  | 2007-05-29 → 2007-06-08 (+10d) |  |  | 115d → 55.24d | none → 57 |  |
| 59 | **Finalize Deliverables** |  | 2007-05-29 → 2007-06-11 (+13d) | 1d → 10d |  | 277d → 61.24d | none → 58 |  |
| 60 | Update Project Plan |  | 2007-05-29 → 2007-06-08 (+10d) |  |  | 115d → 61.24d |  |  |
| 61 | Update Risk List | 2007-05-29 → 2007-06-11 (+13d) | 2007-05-29 → 2007-06-11 (+13d) |  |  | 116d → 61.24d | none → 60 |  |
| 62 | **Requirements** |  | 2007-06-08 → 2007-06-14 (+6d) | 9d → 12.5d |  | 269d → 62.15d | none → 54 |  |
| 64 | **Finalize Deliverables** |  | 2007-06-08 → 2007-06-14 (+6d) | 9d → 12.5d |  | 269d → 62.15d | none → 63 |  |
| 65 | Detail Registration and Login UC |  | 2007-06-04 → 2007-06-14 (+10d) |  |  | 111d → 62.15d |  |  |
| 67 | Parse and Validate Proteomic Experiment File UC |  | 2007-06-08 → 2007-06-12 (+4d) |  |  | 107d → 64.15d |  |  |
| 68 | **Analysis and Design** |  |  |  |  | 257d → 56.84d | none → 62 |  |
| 70 | Object Model for Experiment Annotation |  |  |  |  |  | 57 → 69 |  |
| 72 | Design of Conversion to XAR or PRIDE |  |  |  |  |  | 70 → 71 |  |
| 73 | **Implementation** |  | 2007-07-06 → 2007-07-18 (+12d) | 18d → 25.5d |  | 246d → 60.16d | none → 68 |  |
| 75 | Representative XML Produced |  | 2007-06-29 → 2007-07-11 (+12d) |  |  | 158d → 60.16d | none → 74 |  |
| 76 | UI for Protocol Annotation | 2007-07-02 → 2007-07-11 (+9d) | 2007-07-06 → 2007-07-18 (+12d) |  |  | 85d → 60.16d |  | constraint none → start no earlier than 2007-06-29 |
| 77 | **Test** | 2007-05-29 A → 2007-06-26 A (+28d) | 2007-07-11 → 2007-07-24 (+13d) | 32d → 20.5d |  | 246d → 72.56d | none → 73 |  |
| 79 | Produce Test Plan | 2007-05-29 → 2007-07-18 (+50d) | 2007-05-29 → 2007-07-19 (+51d) |  |  | 116d → 72.56d | none → 78 |  |
| 80 | Junit Tests for Targeted UC | 2007-07-09 → 2007-07-19 (+10d) | 2007-07-11 → 2007-07-24 (+13d) |  |  | 85d → 72.56d | 76 → 79 |  |
| 81 | **Environment** |  | 2007-06-07 → 2007-07-26 (+49d) | 7.75d → 42.5d |  | 270.25d → 86.5d | none → 77 |  |
| 83 | **Set Up Tools** |  | 2007-06-07 → 2007-07-26 (+49d) | 2.75d → 37.5d |  | 270.25d → 86.5d |  |  |
| 84 | Set Up Maven | 2007-06-05 → 2007-07-24 (+49d) | 2007-06-05 → 2007-07-25 (+50d) |  |  | 111d → 86.5d |  |  |
| 85 | Set Up Continuous Integration | 2007-06-05 → 2007-07-25 (+50d) | 2007-06-05 → 2007-07-26 (+51d) |  |  | 111d → 86.5d | 82 → 84 |  |
| 87 | Set Up Selenium | 2007-06-06 → 2007-07-24 (+48d) | 2007-06-06 → 2007-07-25 (+49d) |  |  | 109.25d → 86.75d |  |  |
| 88 | Set Up Code Quality Tools |  | 2007-06-07 → 2007-07-26 (+49d) |  |  | 270.25d → 86.75d |  |  |
| 89 | Elabortion Iteration 1 Complete | 2007-06-29 → 2007-07-26 (+27d) | 2007-06-29 → 2007-07-26 (+27d) |  |  | 158d → 86.5d | 75 → 81 |  |
| 90 | Vacation | 2007-07-02 → 2007-07-26 (+24d) | 2007-07-06 → 2007-08-02 (+27d) |  |  | 158d → 86.5d |  |  |
| 91 | **Elaboration - Iteration 2** | 2007-07-09 → 2007-08-02 (+24d) | 2007-08-03 → 2007-10-25 (+83d) | 20d? → 60d? |  | 158d → 86.5d | 90 → 53 |  |
| 92 | **Project Management** | 2007-07-09 → 2007-08-02 (+24d) | 2007-07-09 → 2007-08-07 (+29d) | 1d → 3d |  | 248d → 86.5d |  |  |
| 93 | Iteration Post Mortem - E1 | 2007-07-09 → 2007-08-02 (+24d) | 2007-07-09 → 2007-08-03 (+25d) |  |  | 87d → 86.5d |  |  |
| 94 | Plan Iteration | 2007-07-09 → 2007-08-03 (+25d) | 2007-07-09 → 2007-08-06 (+28d) |  |  | 87d → 86.5d | none → 93 |  |

| ID | Task | Start | Finish | Duration | Total float | Predecessors |
| --- | --- | --- | --- | --- | --- | --- |
| 95 | Plan for Next Iteration | 2007-07-09 → 2007-08-06 (+28d) | 2007-07-09 → 2007-08-07 (+29d) |  | 87d → 86.5d | none → 94 |
| 96 | **Requirements** | 2007-07-09 → 2007-08-07 (+29d) | 2007-07-10 → 2007-08-16 (+37d) | 2d → 7d | 247d → 86.5d | none → 92 |
| 97 | Incorporate Stakeholder Use Case Feedback | 2007-07-09 → 2007-08-07 (+29d) | 2007-07-10 → 2007-08-09 (+30d) |  | 86d → 86.5d |  |
| 98 | **Finalize Deliverables** | 2007-07-09 → 2007-08-09 (+31d) | 2007-07-10 → 2007-08-16 (+37d) | 2d → 5d | 247d → 86.5d | none → 97 |
| 99 | Detail Registration Use Case | 2007-07-09 → 2007-08-09 (+31d) | 2007-07-09 → 2007-08-10 (+32d) |  | 87d → 86.5d |  |
| 100 | Detail Manage Experiments | 2007-07-09 → 2007-08-10 (+32d) | 2007-07-10 → 2007-08-14 (+35d) |  | 86d → 86.5d | none → 99 |
| 101 | Validation Requirements of XAR and Pride | 2007-07-09 → 2007-08-14 (+36d) | 2007-07-10 → 2007-08-16 (+37d) |  | 86d → 86.5d | none → 100 |
| 102 | **Analysis and Design** | 2007-07-09 → 2007-08-16 (+38d) | 2007-07-17 → 2007-09-04 (+49d) | 7d → 13d | 158d → 86.5d | none → 96 |
| 103 | Update Software Architecture Document | 2007-07-09 → 2007-08-16 (+38d) | 2007-07-10 → 2007-08-20 (+41d) |  | 158d → 86.5d |  |
| 104 | Refine Design of XAR and Pride Conversion | 2007-07-11 → 2007-08-20 (+40d) | 2007-07-17 → 2007-08-27 (+41d) |  | 158d → 86.5d |  |
| 105 | Specify EVS Access | 2007-07-09 → 2007-08-27 (+49d) | 2007-07-11 → 2007-08-30 (+50d) |  | 73d → 86.5d | none → 104 |
| 106 | Specify EBI Access Method | 2007-07-12 → 2007-08-30 (+49d) | 2007-07-16 → 2007-09-04 (+50d) |  | 82d → 86.5d |  |
| 107 | **Implementation** | 2007-07-09 → 2007-09-04 (+57d) | 2007-08-03 → 2007-10-09 (+67d) | 20d → 25d | 229d → 86.5d | none → 102 |
| 108 | Produce Representative XML | 2007-07-09 → 2007-09-04 (+57d) | 2007-07-13 → 2007-09-11 (+60d) |  | 83d → 86.5d |  |
| 109 | Build Manage Protocol UI | 2007-07-09 → 2007-09-11 (+64d) | 2007-07-18 → 2007-09-21 (+65d) |  | 68d → 86.5d | none → 108 |
| 110 | Build Manage Experiments UI | 2007-07-19 → 2007-09-21 (+64d) | 2007-08-03 → 2007-10-09 (+67d) |  | 68d → 86.5d | 105, 109 → 109 |
| 111 | **Test** | 2007-07-09 → 2007-10-09 (+92d) | 2007-07-20 → 2007-10-12 (+84d) | 10d → 3d | 239d → 86.5d | none → 107 |
| 112 | Produce Test Plan | 2007-07-09 → 2007-10-09 (+92d) | 2007-07-09 → 2007-10-10 (+93d) |  | 87d → 86.5d |  |
| 113 | Junit Tests for Targeted UC | 2007-07-19 → 2007-10-10 (+83d) | 2007-07-20 → 2007-10-12 (+84d) |  | 78d → 86.5d | 109 → 112 |
| 114 | **Environment** | 2007-07-09 → 2007-10-12 (+95d) | 2007-07-10 → 2007-10-24 (+106d) | 2d → 8d | 247d → 86.5d | none → 111 |
| 115 | Test Environment Available | 2007-07-09 → 2007-10-12 (+95d) | 2007-07-09 → 2007-10-15 (+98d) |  | 87d → 86.5d |  |
| 116 | Installation Document | 2007-07-09 → 2007-10-15 (+98d) | 2007-07-09 → 2007-10-16 (+99d) |  | 87d → 86.5d | none → 115 |
| 117 | **Set Up Tools** | 2007-07-09 → 2007-10-16 (+99d) | 2007-07-10 → 2007-10-24 (+106d) | 2d → 6d | 247d → 86.5d | none → 116 |
| 118 | Set Up Continuous Integration | 2007-07-09 → 2007-10-16 (+99d) | 2007-07-10 → 2007-10-18 (+100d) |  | 247d → 86.5d |  |
| 119 | Set Up Selenium | 2007-07-09 → 2007-10-18 (+101d) | 2007-07-10 → 2007-10-22 (+104d) |  | 247d → 86.5d | none → 118 |
| 120 | Set Up Code Quality Tools | 2007-07-09 → 2007-10-22 (+105d) | 2007-07-10 → 2007-10-24 (+106d) |  | 247d → 86.5d | none → 119 |
| 121 | **Configuration Management** | 2007-07-09 → 2007-10-24 (+107d) | 2007-07-09 → 2007-10-25 (+108d) |  | 248d → 86.5d | none → 114 |
| 122 | Define Configuration Management Plan | 2007-07-09 → 2007-10-24 (+107d) | 2007-07-09 → 2007-10-25 (+108d) |  | 87d → 86.5d |  |
| 123 | Elaboration Iteration 2 Complete | 2007-08-03 → 2007-10-25 (+83d) | 2007-08-03 → 2007-10-25 (+83d) |  | 68d → 86.5d | 110 → 121 |
| 124 | **Construction Phase** | 2007-07-18 → 2007-10-25 (+99d) | 2008-06-20 → 2008-05-21 (-30d) | 243d → 149.5d |  | 104 → 52 |
| 125 | Construction - Iteration 1 | 2007-07-18 → 2007-10-25 (+99d) | 2007-08-14 → 2007-11-22 (+100d) |  | 158d → 86.5d |  |
| 126 | **Implementation** |  | 2008-06-13 → 2008-05-21 (-23d) | 60d → 43d |  |  |
| 130 | QA deliver |  |  |  |  | 129 → 128 |
| 132 | **Search Protocols** |  |  |  |  | none → 131 |
| 133 | Implement protocol Search |  |  |  |  | 131 → none |
| 135 | Bug Fixes |  |  |  |  | 133, 134 → 134 |
| 136 | **Manage Experiments UC** |  | 2008-06-03 → 2008-05-21 (-13d) | 40d → 31d |  | 135 → 127 |
| 137 | **Create new Experiment** |  | 2008-04-21 → 2008-04-25 (+4d) | 9d → 13d |  |  |
| 146 | Bug Fixes | 2008-06-12 → 2008-04-25 (-48d) | 2008-06-13 → 2008-04-25 (-49d) | 2d → 1d |  | 182 → 145 |
| 147 | Repeat Experiment | 2008-04-22 → 2008-04-28 (+6d) | 2008-04-23 → 2008-04-29 (+6d) |  | 29d → 0d | 143, 137 → 137 |
| 149 | QA Delivery | 2008-04-22 → 2008-05-02 (+10d) | 2008-04-22 → 2008-05-02 (+10d) |  |  | 137 → 148 |
| 150 | Bug Fixes | 2008-04-23 → 2008-05-05 (+12d) | 2008-04-23 → 2008-05-05 (+12d) |  |  |  |
| 151 | **Tree View** | 2008-04-24 → 2008-05-06 (+12d) | 2008-05-28 → 2008-05-21 (-7d) | 25d → 12d |  |  |
| 152 | **implement Tree using struts** | 2008-04-24 → 2008-05-06 (+12d) | 2008-05-28 → 2008-05-21 (-7d) | 25d → 12d |  |  |
| 153 | Design Tree Mechanism | 2008-04-24 → 2008-05-06 (+12d) | 2008-04-29 → 2008-05-09 (+10d) |  |  | 150 → none |
| 154 | **Tree Read Only** | 2008-04-30 → 2008-05-12 (+12d) | 2008-05-07 → 2008-05-19 (+12d) |  |  |  |
| 155 | Overview page | 2008-04-30 → 2008-05-12 (+12d) | 2008-04-30 → 2008-05-12 (+12d) |  |  |  |
| 156 | Protocols Page | 2008-05-01 → 2008-05-13 (+12d) | 2008-05-01 → 2008-05-13 (+12d) |  |  |  |
| 157 | Inputs Page | 2008-05-02 → 2008-05-14 (+12d) | 2008-05-02 → 2008-05-14 (+12d) |  |  |  |
| 158 | Outputs Page | 2008-05-05 → 2008-05-15 (+10d) | 2008-05-05 → 2008-05-15 (+10d) |  |  |  |
| 159 | Review Protocol Page | 2008-05-06 → 2008-05-16 (+10d) | 2008-05-06 → 2008-05-16 (+10d) |  |  |  |
| 160 | Experiment Summary Page | 2008-05-07 → 2008-05-19 (+12d) | 2008-05-07 → 2008-05-19 (+12d) |  |  |  |
| 161 | QA delivery | 2008-05-12 → 2008-05-20 (+8d) | 2008-05-12 → 2008-05-20 (+8d) |  |  | XAR File download → 154 |
| 162 | Bug Fixes | 2008-05-13 → 2008-05-21 (+8d) | 2008-05-13 → 2008-05-21 (+8d) |  |  |  |
| 166 | Add/Edit Protocols Page | 2008-05-16 → 2007-04-02 (-410d) | 2008-05-19 → 2007-04-03 (-412d) |  | 0d → 328d | 193 → none |
| 167 | Add/Edit Inputs Page | 2008-05-20 → 2007-04-04 (-412d) | 2008-05-21 → 2007-04-05 (-412d) |  | 0d → 328d |  |
| 168 | Add/Edit Outputs Page | 2008-05-22 → 2007-04-06 (-412d) | 2008-05-23 → 2007-04-09 (-410d) |  | 0d → 328d |  |
| 169 | Review Protocol Page | 2008-05-26 → 2007-04-10 (-412d) | 2008-05-26 → 2007-04-10 (-412d) |  | 0d → 328d |  |
| 170 | Experiment Summary Page | 2008-05-27 → 2007-04-11 (-412d) | 2008-05-27 → 2007-04-11 (-412d) |  | 0d → 328d |  |
| 171 | Delete Expeirment Run | 2008-05-28 → 2007-04-02 (-422d) | 2008-05-28 → 2007-04-02 (-422d) |  | 0d → 335d | Tree Edit → none |
| 172 | QA delivery | 2008-05-29 → 2008-05-22 (-7d) | 2008-05-29 → 2008-05-22 (-7d) |  |  |  |
| 173 | Bug Fixes | 2008-05-30 → 2008-05-23 (-7d) | 2008-06-02 → 2008-05-26 (-7d) |  |  |  |
| 174 | **QA Delivery - after bug fixes** | 2008-06-03 → 2008-05-27 (-7d) | 2008-06-03 → 2008-07-11 (+38d) | 1d → 34d |  |  |
| 176 | **Register User UC** | 2008-06-04 → 2008-05-27 (-8d) | 2008-06-10 → 2008-06-13 (+3d) | 5d → 14d |  | 136 → none |
| 177 | **LDAP Integration for Registration** | 2008-06-04 → 2008-05-27 (-8d) | 2008-06-05 → 2008-05-28 (-8d) |  |  |  |
| 178 | Account Registration (email) | 2008-06-04 → 2008-05-27 (-8d) | 2008-06-04 → 2008-05-27 (-8d) |  |  |  |
| 179 | Implement UI (2 screens) | 2008-06-05 → 2008-05-28 (-8d) | 2008-06-05 → 2008-05-28 (-8d) |  |  |  |
| 180 | **User Management** | 2008-06-06 → 2008-05-29 (-8d) | 2008-06-10 → 2008-06-02 (-8d) |  |  |  |
| 181 | Implement User Add/Edit Page | 2008-06-06 → 2008-05-29 (-8d) | 2008-06-10 → 2008-06-02 (-8d) |  |  |  |
| 182 | QA delivery | 2008-06-11 → 2008-06-03 (-8d) | 2008-06-11 → 2008-06-03 (-8d) |  |  | 176 → 180 |

| ID | Task | Start | Finish | Total float | Predecessors |
| --- | --- | --- | --- | --- | --- |
| 184 | **Final Product Delivery** | 2008-06-16 → 2008-06-06 (-10d) | 2008-06-20 → 2008-06-12 (-8d) |  | 146 → 183 |
| 185 | Zope Site Setup | 2008-06-16 → 2008-06-06 (-10d) | 2008-06-18 → 2008-06-10 (-8d) |  | 178 → none |
| 186 | Deploy to Production | 2008-06-19 → 2008-06-11 (-8d) | 2008-06-20 → 2008-06-12 (-8d) |  |  |
| 187 | Release Candidate Delivered to QA | 2007-07-18 → 2008-06-13 (+331d) | 2007-07-18 → 2008-06-13 (+331d) | 242d → 0d | none → 184 |
| 188 | **Transition Phase** | 2008-06-23 → 2008-06-16 (-7d) | 2008-07-18 → 2008-07-11 (-7d) |  | 124, 187 → 187, 176 |
| 189 | Transition - Iteration 1 | 2008-06-23 → 2008-06-16 (-7d) | 2008-07-18 → 2008-07-11 (-7d) |  |  |
| 193 | Overview page | 2008-05-15 → 2008-07-14 (+60d) | 2008-05-15 → 2008-07-14 (+60d) |  |  |

## Version 4 (saved 2008-07-10)

Note of the change: SVN-Revision: 557

Last finish 2008-07-14 → 2008-08-04 (+21d).

Added:

| ID | Task | Duration | Start | Finish | Predecessors |
| --- | --- | --- | --- | --- | --- |
| 149 | Delete Experiment | 3d | 2008-05-29 | 2008-06-02 | 148 |
| 165 | **LDAP integration for Registration** | 8d | 2008-07-01 | 2008-07-10 |  |

Removed: 177 LDAP Integration for Registration; 190 protExpress 1.x; 191 Tree Edit; 192 Stage Delivery??; 193 Overview page

Changed:

| ID | Task | Start | Finish | Duration | Complete | Total float | Predecessors | Other |
| --- | --- | --- | --- | --- | --- | --- | --- | --- |
| 1 | **protExpress 1.0** |  | 2008-05-21 → 2008-07-18 (+58d) | 298d? → 340d? | 45% → 42% | 38d → 11d |  |  |
| 52 | **Elaboration Phase** |  | 2007-10-25 → 2007-12-31 (+67d) | 107.5d? → 155d? |  | 86.5d → 59d |  |  |
| 91 | **Elaboration - Iteration 2** |  | 2007-10-25 → 2007-12-31 (+67d) | 60d? → 107.5d? |  | 86.5d → 59d |  |  |
| 123 | Elaboration Iteration 2 Complete | 2007-10-25 → 2007-12-31 (+67d) | 2007-10-25 → 2007-12-31 (+67d) |  |  | 86.5d → 59d |  | constraint none → finish no earlier than 2007-12-31 |
| 124 | **Construction Phase** | 2007-10-25 → 2008-03-24 (+151d) | 2008-05-21 → 2008-07-18 (+58d) | 149.5d → 85d |  |  |  |  |
| 125 | **Construction - Iteration 1** | 2007-10-25 → 2008-03-24 (+151d) | 2007-11-22 → 2008-07-18 (+239d) | 4w → 85d |  | 86.5d → 0d |  |  |
| 126 | **Implementation** |  | 2008-05-21 → 2008-07-18 (+58d) | 43d → 85d |  |  | 125 → none |  |
| 127 | **Search Repository UC** |  | 2008-04-08 → 2008-04-22 (+14d) | 12d → 22d |  |  |  |  |
| 128 | **Search Experiments** |  | 2008-03-27 → 2008-04-03 (+7d) | 4d → 9d |  |  |  |  |
| 129 | Implement Experiment Search |  | 2008-03-27 → 2008-04-03 (+7d) | 4d → 9d |  |  |  |  |
| 130 | QA deliver | 2008-03-28 → 2008-04-04 (+7d) | 2008-03-28 → 2008-04-04 (+7d) |  |  |  |  |  |
| 131 | Bug Fixes | 2008-03-31 → 2008-04-07 (+7d) | 2008-03-31 → 2008-04-07 (+7d) |  |  |  |  |  |
| 132 | **Search Protocols** | 2008-04-01 → 2008-04-08 (+7d) | 2008-04-04 → 2008-04-18 (+14d) | 4d → 9d |  |  |  |  |
| 133 | Implement protocol Search | 2008-04-01 → 2008-04-08 (+7d) | 2008-04-04 → 2008-04-18 (+14d) | 4d → 9d |  |  |  |  |
| 134 | QA Delivery | 2008-04-07 → 2008-04-21 (+14d) | 2008-04-07 → 2008-04-21 (+14d) |  |  |  |  |  |
| 135 | Bug Fixes | 2008-04-08 → 2008-04-22 (+14d) | 2008-04-08 → 2008-04-22 (+14d) |  |  |  |  |  |
| 136 | **Manage Experiments UC** | 2008-04-09 → 2008-04-23 (+14d) | 2008-05-21 → 2008-06-30 (+40d) | 31d → 49d |  |  |  |  |
| 137 | **Create new Experiment** | 2008-04-09 → 2008-04-23 (+14d) | 2008-04-25 → 2008-05-14 (+19d) | 13d → 16d |  |  |  |  |
| 138 | Overview page | 2008-04-09 → 2008-04-23 (+14d) | 2008-04-09 → 2008-04-24 (+15d) | 1d → 2d |  |  |  |  |
| 139 | Add/Edit Protocols Page | 2008-04-10 → 2008-04-25 (+15d) | 2008-04-11 → 2008-04-28 (+17d) |  |  |  |  |  |
| 140 | Add/Edit Inputs Page | 2008-04-14 → 2008-04-29 (+15d) | 2008-04-15 → 2008-04-30 (+15d) |  |  |  |  |  |
| 141 | Add/Edit Outputs Page | 2008-04-16 → 2008-05-01 (+15d) | 2008-04-17 → 2008-05-02 (+15d) |  |  |  |  |  |
| 142 | Review Protocol Page | 2008-04-18 → 2008-05-05 (+17d) | 2008-04-18 → 2008-05-06 (+18d) | 1d → 2d |  |  |  |  |
| 143 | Experiment Summary Page | 2008-04-21 → 2008-05-07 (+16d) | 2008-04-21 → 2008-05-08 (+17d) | 1d → 2d |  |  |  |  |
| 144 | Parent/Child Notation | 2008-04-22 → 2008-05-09 (+17d) | 2008-04-23 → 2008-05-12 (+19d) |  |  |  |  |  |
| 145 | QA Delivery | 2008-04-24 → 2008-05-13 (+19d) | 2008-04-24 → 2008-05-13 (+19d) |  |  |  |  |  |
| 146 | Bug Fixes | 2008-04-25 → 2008-05-14 (+19d) | 2008-04-25 → 2008-05-14 (+19d) |  |  |  |  |  |
| 147 | Repeat Experiment | 2008-04-28 → 2008-05-15 (+17d) | 2008-04-29 → 2008-05-21 (+22d) | 2d → 5d |  |  |  |  |
| 148 | XAR File Download | 2008-04-30 → 2008-05-22 (+22d) | 2008-05-01 → 2008-05-28 (+27d) | 2d → 5d |  |  |  |  |
| 150 | QA Delivery | 2008-05-02 → 2008-06-03 (+32d) | 2008-05-02 → 2008-06-03 (+32d) |  |  |  | 148 → 149 |  |
| 151 | Bug Fixes | 2008-05-05 → 2008-06-04 (+30d) | 2008-05-05 → 2008-06-04 (+30d) |  |  |  |  |  |
| 152 | **Tree View** | 2008-05-06 → 2008-06-05 (+30d) | 2008-05-21 → 2008-06-30 (+40d) | 12d → 18d |  |  |  |  |
| 153 | **implement Tree using struts** | 2008-05-06 → 2008-06-05 (+30d) | 2008-05-21 → 2008-06-30 (+40d) | 12d → 18d |  |  |  |  |
| 154 | Design Tree Mechanism | 2008-05-06 → 2008-06-05 (+30d) | 2008-05-09 → 2008-06-10 (+32d) |  |  |  |  |  |
| 155 | **Tree View** | 2008-05-12 → 2008-06-11 (+30d) | 2008-05-19 → 2008-06-26 (+38d) | 6d → 12d |  |  |  | was named Tree Read Only |
| 156 | Overview page | 2008-05-12 → 2008-06-11 (+30d) | 2008-05-12 → 2008-06-12 (+31d) | 1d → 2d |  |  |  |  |
| 157 | Protocols Page | 2008-05-13 → 2008-06-13 (+31d) | 2008-05-13 → 2008-06-16 (+34d) | 1d → 2d |  |  |  |  |
| 158 | Inputs Page | 2008-05-14 → 2008-06-17 (+34d) | 2008-05-14 → 2008-06-18 (+35d) | 1d → 2d |  |  |  |  |
| 159 | Outputs Page | 2008-05-15 → 2008-06-19 (+35d) | 2008-05-15 → 2008-06-20 (+36d) | 1d → 2d |  |  |  |  |
| 160 | Review Protocol Page | 2008-05-16 → 2008-06-23 (+38d) | 2008-05-16 → 2008-06-24 (+39d) | 1d → 2d |  |  |  |  |
| 161 | Experiment Summary Page | 2008-05-19 → 2008-06-25 (+37d) | 2008-05-19 → 2008-06-26 (+38d) | 1d → 2d |  |  |  |  |
| 162 | QA delivery | 2008-05-20 → 2008-06-27 (+38d) | 2008-05-20 → 2008-06-27 (+38d) |  |  |  |  |  |
| 163 | Bug Fixes | 2008-05-21 → 2008-06-30 (+40d) | 2008-05-21 → 2008-06-30 (+40d) |  |  |  |  |  |
| 164 | **Register User UC** | 2008-05-27 → 2008-07-01 (+35d) | 2008-06-13 → 2008-07-18 (+35d) |  |  |  | none → 136 |  |
| 166 | Account Registration (email) | 2008-05-27 → 2008-07-01 (+35d) | 2008-05-27 → 2008-07-04 (+38d) | 1d → 4d |  |  |  |  |
| 167 | Implement UI (2 screens) | 2008-05-28 → 2008-07-07 (+40d) | 2008-05-28 → 2008-07-10 (+43d) | 1d → 4d |  |  |  |  |
| 168 | **User Management** | 2008-05-29 → 2008-07-11 (+43d) | 2008-06-02 → 2008-07-16 (+44d) | 3d → 4d |  |  | LDAP Integration for Registration → 165 |  |
| 169 | Implement User Add/Edit Page | 2008-05-29 → 2008-07-11 (+43d) | 2008-06-02 → 2008-07-16 (+44d) | 3d → 4d |  |  |  |  |
| 170 | QA delivery | 2008-06-03 → 2008-07-17 (+44d) | 2008-06-03 → 2008-07-17 (+44d) |  |  |  |  |  |
| 171 | Bug Fixes | 2008-06-04 → 2008-07-18 (+44d) | 2008-06-05 → 2008-07-18 (+43d) | 2d → 1d |  |  |  |  |
| 181 | QA delivery | 2008-05-22 → 2008-07-01 (+40d) | 2008-05-22 → 2008-07-01 (+40d) |  |  | 0d → 11d |  |  |
| 182 | Bug Fixes | 2008-05-23 → 2008-07-02 (+40d) | 2008-05-26 → 2008-07-03 (+38d) |  |  | 0d → 11d |  |  |
| 183 | **QA Delivery - after bug fixes** | 2008-05-27 → 2008-07-21 (+55d) | 2008-07-11 → 2008-08-04 (+24d) | 34d → 11d |  |  |  |  |
| 184 | **Final Product Delivery** | 2008-06-06 → 2008-07-21 (+45d) | 2008-06-12 → 2008-07-25 (+43d) |  |  |  | 171 → 124 |  |
| 185 | Zope Site Setup | 2008-06-06 → 2008-07-21 (+45d) | 2008-06-10 → 2008-07-23 (+43d) |  |  |  |  |  |
| 186 | Deploy to Production | 2008-06-11 → 2008-07-24 (+43d) | 2008-06-12 → 2008-07-25 (+43d) |  |  |  |  |  |
| 187 | Release Candidate Delivered to QA | 2008-06-13 → 2008-07-28 (+45d) | 2008-06-13 → 2008-07-28 (+45d) |  |  |  |  |  |
| 188 | **Transition Phase** | 2008-06-16 → 2008-07-29 (+43d) | 2008-07-11 → 2008-08-04 (+24d) | 20d → 5d |  |  | 187, 164 → 187 |  |
| 189 | Transition - Iteration 1 | 2008-06-16 → 2008-07-29 (+43d) | 2008-07-11 → 2008-08-04 (+24d) | 4w → 1w |  |  |  |  |

## Version 5 (saved 2008-07-10)

Note of the change: added plan going forward

Last finish 2008-08-04 → 2008-07-31 (-4d).

Added:

| ID | Task | Duration | Start | Finish | Predecessors | Constraint |
| --- | --- | --- | --- | --- | --- | --- |
| 170 | Implement Forgot Password | 1d | 2008-07-11 | 2008-07-11 |  |  |
| 191 | **Plan going forward from 7/11/2008** | 15d? | 2008-07-11 | 2008-07-31 |  |  |
| 192 | Build to QA targetting the Edit Functionality | 3d | 2008-07-11 | 2008-07-15 |  | start no earlier than 2008-07-11 |
| 193 | Build with XAR Generation Functionality and Tree bug fixes | 5d | 2008-07-16 | 2008-07-22 | 192 | start no earlier than 2008-07-16 |
| 194 | Build with Repeat Exp Runs and Delete Exp and Exp parts - Part 1 of registrataion | 3d | 2008-07-23 | 2008-07-25 | 193 | start no earlier than 2008-07-23 |
| 195 | Part2 of registration | 3d | 2008-07-28 | 2008-07-30 | 194 | start no earlier than 2008-07-28 |
| 196 | Bug fixes | 1d? | 2008-07-31 | 2008-07-31 | 195 |  |

Removed: 188 Transition Phase; 189 Transition - Iteration 1

Changed:

| ID | Task | Finish | Duration | Total float | Other |
| --- | --- | --- | --- | --- | --- |
| 169 | Implement User Edit Page |  |  | 0d → 3d | was named Implement User Add/Edit Page |
| 184 | **QA Delivery - after bug fixes** | 2008-08-04 → 2008-07-28 (-7d) | 11d → 6d | 0d → 3d |  |

## Version 6 (saved 2008-07-11)

Note of the change: updated the future plan at bottom

Last finish 2008-07-31 → 2008-08-12 (+12d).

Changed:

| ID | Task | Start | Finish | Duration | Other |
| --- | --- | --- | --- | --- | --- |
| 191 | **Plan going forward from 7/11/2008** |  | 2008-07-31 → 2008-08-12 (+12d) | 15d? → 23d |  |
| 192 | Build targeting the Edit Input/Output |  |  |  | was named Build to QA targetting the Edit Functionality |
| 193 | Build targeting XAR Generation and Tree fixes |  |  |  | was named Build with XAR Generation Functionality and Tree bug fixes; resources none → kkanchinadam; smatyas |
| 194 | Build targeting Repeat/Delete Exp - Registration part 1 |  | 2008-07-25 → 2008-07-29 (+4d) | 3d → 5d | was named Build with Repeat Exp Runs and Delete Exp and Exp parts - Part 1 of registrataion; resources none → kkanchinadam; smatyas |
| 195 | Registration Part 2 and bug fixes | 2008-07-28 → 2008-07-30 (+2d) | 2008-07-30 → 2008-08-05 (+6d) | 3d → 5d | was named Part2 of registration; resources none → kkanchinadam |
| 196 | Bug fixes | 2008-07-31 → 2008-08-06 (+6d) | 2008-07-31 → 2008-08-12 (+12d) | 1d? → 5d | resources none → kkanchinadam |
